# Gantt EPSA

Schedule from GanttProject, 2019-06-27 to 2020-06-24, baseline: 15_05_2019.
EPSA

## Calendars

- Project calendar: Mon-Sun working.

## Resources

| Resource |
| --- |
| MJT |
| ARZ |
| TLS |
| PTN |
| CMI |
| NGO |
| MRI |
| ACO |
| TMN |
| PTS |
| TCN |
| ASE |
| VBU |
| CAD |
| MKI |
| MSO |
| PAX |
| EPZ |
| SGX |
| JMN |
| JRT |
| CLS |
| RMN |
| BMA |

## Schedule

| ID | WBS | Task | Type | Duration | Start | Finish | Baseline start | Baseline finish | Baseline duration |
| --- | --- | --- | --- | --- | --- | --- | --- | --- | --- |
| 1 | 1 | **Tops** |  | 363d | 2019-06-27 | 2020-06-23 | 2019-04-03 | 2020-02-16 | 320d |
| 2 | 1.1 | Top Appro | milestone | 0d | 2019-06-27 | 2019-06-27 | 2019-06-27 | 2019-06-27 | 0d |
| 3 | 1.2 | Top Saison | milestone | 0d | 2019-09-30 | 2019-09-30 | 2019-09-30 | 2019-09-30 | 0d |
| 4 | 1.3 | Top Synthèse | milestone | 0d | 2019-10-16 | 2019-10-16 | 2019-10-02 | 2019-10-02 | 0d |
| 5 | 1.4 | Top Copeau 1 | milestone | 0d | 2019-11-13 | 2019-11-13 | 2019-11-06 | 2019-11-06 | 0d |
| 6 | 1.5 | Top Copeau 2 | milestone | 0d | 2019-11-20 | 2019-11-20 | 2019-11-20 | 2019-11-20 | 0d |
| 7 | 1.6 | Top Organe | milestone | 0d | 2020-02-05 | 2020-02-05 | 2020-02-05 | 2020-02-05 | 0d |
| 8 | 1.7 | Top Véhicule | milestone | 0d | 2020-02-19 | 2020-02-19 | 2020-02-19 | 2020-02-19 | 0d |
| 9 | 1.8 | Top Moteur | milestone | 0d | 2020-03-04 | 2020-03-04 | 2020-03-04 | 2020-03-04 | 0d |
| 10 | 1.9 | Top Qualif | milestone | 0d | 2020-03-17 | 2020-03-17 | 2020-03-17 | 2020-03-17 | 0d |
| 11 | 1.10 | Top Compet | milestone | 0d | 2020-06-24 | 2020-06-24 | 2020-06-24 | 2020-06-24 | 0d |
| 12 | 2 | **Vacances** |  | 188d | 2019-08-26 | 2020-02-29 |  |  |  |
| 13 | 2.1 | **Vacances ECL** |  | 127d | 2019-10-26 | 2020-02-29 |  |  |  |
| 14 | 2.1.1 | Toussaint |  | 9d | 2019-10-26 | 2019-11-03 |  |  |  |
| 15 | 2.1.2 | Noel |  | 16d | 2019-12-21 | 2020-01-05 |  |  |  |
| 16 | 2.1.3 | Hivers |  | 1d | 2020-02-29 | 2020-02-29 |  |  |  |
| 17 | 2.2 | **Vacances partenaires** |  | 133d | 2019-08-26 | 2020-01-05 |  |  |  |
| 18 | 2.2.1 | **Giraudière** |  | 133d | 2019-08-26 | 2020-01-05 |  |  |  |
| 19 | 2.2.1.1 | Toussaint |  | 9d | 2019-10-26 | 2019-11-03 |  |  |  |
| 20 | 2.2.1.2 | Noel |  | 16d | 2019-12-21 | 2020-01-05 |  |  |  |
| 21 | 2.2.1.3 | Hiver |  | 1d | 2019-08-26 | 2019-08-26 |  |  |  |
| 22 | 2.2.2 | **Boisard** |  | 16d | 2019-12-21 | 2020-01-05 |  |  |  |
| 23 | 2.2.2.1 | Noel |  | 16d | 2019-12-21 | 2020-01-05 |  |  |  |
| 24 | 2.2.3 | **La mache** |  | 16d | 2019-12-21 | 2020-01-05 |  |  |  |
| 25 | 2.2.3.1 | Noel |  | 16d | 2019-12-21 | 2020-01-05 |  |  |  |

| ID | WBS | Task | Duration | Start | Finish | Predecessors | Complete | Baseline start | Baseline finish | Baseline duration | Resources |
| --- | --- | --- | --- | --- | --- | --- | --- | --- | --- | --- | --- |
| 26 | 3 | **Global** | 363d | 2019-06-27 | 2020-06-23 |  |  |  |  |  |  |
| 27 | 3.1 | Livrables | 363d | 2019-06-27 | 2020-06-23 | 2, 11FF |  | 2019-05-08 | 2019-05-27 | 20d |  |
| 28 | 3.2 | Carnet de conception | 51d | 2019-08-01 | 2019-09-20 |  |  |  |  |  | TLS |
| 29 | 3.3 | Nomenclature | 51d | 2019-08-01 | 2019-09-20 |  |  |  |  |  | TLS |
| 30 | 4 | **LAS** | 117d | 2019-08-19 | 2019-12-13 |  | 16% | 2019-05-08 | 2019-05-22 | 15d |  |
| 31 | 4.1 | **Cinématique** | 56d | 2019-08-19 | 2019-10-13 |  | 86% |  |  |  |  |
| 32 | 4.1.1 | Gabarit de châssis | 14d | 2019-09-16 | 2019-09-29 |  | 100% |  |  |  |  |
| 33 | 4.1.2 | Points de LAS avant | 42d | 2019-08-19 | 2019-09-29 |  | 100% |  |  |  | MKI; MSO; PAX |
| 34 | 4.1.3 | Points de LAS arrière | 35d | 2019-08-26 | 2019-09-29 |  | 100% |  |  |  | MKI; MSO; PAX |
| 35 | 4.1.4 | Seconde itération | 14d | 2019-09-30 | 2019-10-13 | 33, 34 |  |  |  |  | MKI; MSO; PAX |
| 36 | 4.2 | **Cas de charge** | 52d | 2019-09-23 | 2019-11-13 |  | 5% |  |  |  |  |
| 37 | 4.2.1 | Paul Clauzel | 3d | 2019-09-23 | 2019-09-25 |  | 100% |  |  |  | MKI |
| 38 | 4.2.2 | Modèle | 11d | 2019-09-26 | 2019-10-06 | 37 |  |  |  |  | MKI |
| 39 | 4.2.3 | Cas de charge | 14d | 2019-10-07 | 2019-10-20 | 38 |  |  |  |  | MKI |
| 40 | 4.2.4 | Vérification | 7d | 2019-10-21 | 2019-10-27 | 39 |  |  |  |  | MKI |
| 41 | 4.2.5 | Itérations | 7d | 2019-10-28 | 2019-11-03 | 40 |  |  |  |  | MKI |
| 42 | 4.2.6 | Fin des cas de charges | 10d | 2019-11-04 | 2019-11-13 | 41 |  |  |  |  | MKI |
| 43 | 4.3 | **Roue équipée** | 117d | 2019-08-19 | 2019-12-13 |  | 12% |  |  |  |  |
| 44 | 4.3.1 | Choix des pneus | 12d | 2019-08-19 | 2019-08-30 | 33SS | 100% |  |  |  | MKI; MSO |
| 45 | 4.3.2 | Architecture | 7d | 2019-10-14 | 2019-10-20 |  |  |  |  |  | MSO |
| 46 | 4.3.3 | Modifications | 7d | 2019-10-14 | 2019-10-20 | 45SS |  |  |  |  | MSO |
| 47 | 4.3.4 | Frette de frein | 7d | 2019-10-21 | 2019-10-27 | 46 |  |  |  |  | MSO |
| 48 | 4.3.5 | Ebauche CATIA | 14d | 2019-10-28 | 2019-11-10 | 47 |  |  |  |  | MSO |
| 49 | 4.3.6 | Retour points de LAS | 14d | 2019-10-28 | 2019-11-10 | 48SS |  |  |  |  | MSO |
| 50 | 4.3.7 | Optimisation | 26d | 2019-11-11 | 2019-12-06 | 48 |  |  |  |  | MSO |
| 51 | 4.3.8 | Fabricabilité | 7d | 2019-12-07 | 2019-12-13 | 50 |  |  |  |  | MSO |

Notes:
- 37: Le contacter pour la licence Mecamaster
- 39: Premiers cas de charges
- 40: A voir avec Paul Clozel
- 46: Recherche des éléments où il faut investir du temps
- 47: Etudier la faisabilité d'un frette combiné au moyeu

| ID | WBS | Task | Duration | Start | Finish | Predecessors | Complete | Resources |
| --- | --- | --- | --- | --- | --- | --- | --- | --- |
| 52 | 4.4 | **Triangles** | 56d | 2019-10-07 | 2019-12-01 |  |  |  |
| 53 | 4.4.1 | Choix réglage | 7d | 2019-10-07 | 2019-10-13 |  |  | MKI |
| 54 | 4.4.2 | Choix rotules | 7d | 2019-10-14 | 2019-10-20 | 53 |  | MKI |
| 55 | 4.4.3 | Choix entretoises | 7d | 2019-10-14 | 2019-10-20 | 53 |  | MKI |
| 56 | 4.4.4 | Dimensionnement biellettes | 7d | 2019-10-21 | 2019-10-27 | 53, 54 |  | MKI |
| 57 | 4.4.5 | Dimensionnement visserie | 7d | 2019-10-14 | 2019-10-20 | 53 |  | MKI |
| 58 | 4.4.6 | Dimenssionnement des tubes | 7d | 2019-10-21 | 2019-10-27 | 39, 53 |  | MKI |
| 59 | 4.4.7 | Dimensionnement des inserts | 7d | 2019-10-28 | 2019-11-03 | 58 |  | MKI |
| 60 | 4.4.8 | Essais collages | 28d | 2019-11-04 | 2019-12-01 | 59 |  | MKI |
| 61 | 4.5 | **Suspension** | 21d | 2019-09-30 | 2019-10-20 |  |  |  |
| 62 | 4.5.1 | Basculeurs | 14d | 2019-09-30 | 2019-10-13 |  |  | PAX |
| 63 | 4.5.2 | Pivot | 7d | 2019-10-14 | 2019-10-20 | 62 |  | PAX |
| 64 | 4.6 | **Anti-roulis** | 28d | 2019-09-30 | 2019-10-27 |  |  |  |
| 65 | 4.6.1 | Modèle efforts | 14d | 2019-09-30 | 2019-10-13 |  |  | PAX |
| 66 | 4.6.2 | Dimenssionnement de la barre de torsion | 14d | 2019-10-14 | 2019-10-27 | 65 |  | PAX |
| 67 | 4.6.3 | Couteaux | 14d | 2019-09-30 | 2019-10-13 |  |  | PAX |
| 68 | 4.6.4 | Pivot | 7d | 2019-10-14 | 2019-10-20 | 67 |  | PAX |
| 69 | 4.6.5 | Coussinets | 7d | 2019-10-21 | 2019-10-27 | 68 |  | PAX |
| 70 | 4.7 | **Direction** | 49d | 2019-09-23 | 2019-11-10 |  | 14% | SGX |
| 71 | 4.7.1 | Cinématique | 14d | 2019-09-23 | 2019-10-06 |  | 50% | MKI; SGX |
| 72 | 4.7.2 | Cardan | 14d | 2019-10-07 | 2019-10-20 | 71 |  | SGX |
| 73 | 4.7.3 | Colonne de direction | 7d | 2019-10-21 | 2019-10-27 | 72 |  | SGX |
| 74 | 4.7.4 | Finalisation cinématique | 7d | 2019-10-28 | 2019-11-03 | 33, 73 |  | SGX |
| 75 | 4.7.5 | Pivot et manchon | 7d | 2019-11-04 | 2019-11-10 | 74 |  | SGX |

Notes:
- 53: Voir Claude Rouelle : pas différents de chaque côté des biellettes
- 60: Fatigue
- 65: Pour la démarche
- 66: Pour la démarche
- 67: Pour la démarche
- 68: Pour la démarche
- 69: Pour la démarche

| ID | WBS | Task | Duration | Start | Finish | Predecessors | Complete | Baseline start | Baseline finish | Baseline duration | Resources |
| --- | --- | --- | --- | --- | --- | --- | --- | --- | --- | --- | --- |
| 76 | 4.8 | **Freinage** | 56d | 2019-09-23 | 2019-11-17 |  | 9% |  |  |  | EPZ |
| 77 | 4.8.1 | Répartition freinage | 14d | 2019-09-23 | 2019-10-06 |  | 50% |  |  |  |  |
| 78 | 4.8.2 | Dimenssionnement disques | 21d | 2019-10-07 | 2019-10-27 | 77 |  |  |  |  |  |
| 79 | 4.8.3 | Dimenssionnement étrier | 21d | 2019-10-07 | 2019-10-27 | 77 |  |  |  |  |  |
| 80 | 4.8.4 | Durites | 21d | 2019-10-28 | 2019-11-17 | 79 |  |  |  |  |  |
| 81 | 4.9 | **Pédalier** | 42d | 2019-10-02 | 2019-11-12 |  |  |  |  |  |  |
| 82 | 4.9.1 | Règlement et état de l'Art | 7d | 2019-10-02 | 2019-10-08 |  |  |  |  |  | JMN; JRT |
| 83 | 4.9.2 | Choix des liaisons mécaniques | 7d | 2019-10-09 | 2019-10-15 | 82 |  |  |  |  | JMN; JRT |
| 84 | 4.9.3 | Finir dimensionnement | 14d | 2019-10-16 | 2019-10-29 | 83 |  |  |  |  | JMN; JRT |
| 85 | 4.9.4 | Finir conception | 7d | 2019-10-30 | 2019-11-05 | 84 |  |  |  |  | JMN; JRT |
| 86 | 4.9.5 | Finir maquette | 7d | 2019-11-06 | 2019-11-12 | 85 |  |  |  |  | JMN; JRT |
| 87 | 5 | **Frame** | 100d | 2019-08-12 | 2019-11-19 |  | 10% | 2019-05-08 | 2019-05-18 | 11d |  |
| 88 | 5.1 | **Structure tubulaire** | 98d | 2019-08-12 | 2019-11-17 |  | 23% |  |  |  |  |
| 89 | 5.1.1 | Premières esquisses | 28d | 2019-08-12 | 2019-09-08 |  | 100% |  |  |  | CMI |
| 90 | 5.1.2 | Points de LAS | 21d | 2019-09-09 | 2019-09-29 | 89 | 30% |  |  |  | CMI |
| 91 | 5.1.3 | Moteur - Echappement | 21d | 2019-09-09 | 2019-09-29 | 89 |  |  |  |  | CMI |
| 92 | 5.1.4 | Finalisation filaire | 14d | 2019-09-16 | 2019-09-29 |  |  |  |  |  | CMI |
| 93 | 5.1.5 | Seconde itération | 14d | 2019-09-30 | 2019-10-13 | 90, 91, 92 |  |  |  |  | CMI |
| 94 | 5.1.6 | Vérif règlement | 7d | 2019-10-14 | 2019-10-20 | 93 |  |  |  |  | CMI |
| 95 | 5.1.7 | Raideur en torsions | 14d | 2019-10-14 | 2019-10-27 |  |  |  |  |  | CMI |
| 96 | 5.1.8 | Autres cas de charge | 14d | 2019-10-21 | 2019-11-03 |  |  |  |  |  | CMI |
| 97 | 5.1.9 | Vérif règlement | 14d | 2019-11-04 | 2019-11-17 | 95, 96 |  |  |  |  | CMI |
| 98 | 5.2 | Ergonomie | 49d | 2019-09-30 | 2019-11-17 | 97FF |  |  |  |  | CMI |
| 99 | 5.3 | **Equipements** | 58d | 2019-09-23 | 2019-11-19 |  |  |  |  |  |  |
| 100 | 5.3.1 | Suivi des chappes | 58d | 2019-09-23 | 2019-11-19 | 6FF |  |  |  |  | TLS |
| 101 | 5.3.2 | Anti-intrusion plate | 35d | 2019-10-14 | 2019-11-17 | 93 |  |  |  |  | CMI |
| 102 | 5.3.3 | Pare-feu | 35d | 2019-10-14 | 2019-11-17 | 93 |  |  |  |  | CMI |
| 103 | 5.3.4 | Fond plat | 35d | 2019-10-14 | 2019-11-17 | 93 |  |  |  |  | PTS |

Notes:
- 76: En collaboration avec la roue équipée et le pédalier

| ID | WBS | Task | Duration | Start | Finish | Predecessors | Complete | Resources |
| --- | --- | --- | --- | --- | --- | --- | --- | --- |
| 104 | 6 | **Aéro** | 91d | 2019-08-19 | 2019-11-17 |  | 19% |  |
| 105 | 6.1 | **Fabrication** | 40d | 2019-09-04 | 2019-10-13 |  | 57% |  |
| 106 | 6.1.1 | **Démarchage** | 40d | 2019-09-04 | 2019-10-13 |  | 57% |  |
| 107 | 6.1.1.1 | Rédaction du mail | 7d | 2019-09-04 | 2019-09-10 |  | 100% | ACO |
| 108 | 6.1.1.2 | Recherche de contacts | 40d | 2019-09-04 | 2019-10-13 |  | 50% | ACO |
| 109 | 6.2 | **Méthode numérique** | 35d | 2019-08-19 | 2019-09-22 |  |  |  |
| 110 | 6.2.1 | Simulation mécanique | 35d | 2019-08-19 | 2019-09-22 |  |  | NGO |
| 111 | 6.3 | **Carrosserie** | 63d | 2019-09-16 | 2019-11-17 |  | 22% |  |
| 112 | 6.3.1 | REX et étude concurrence | 14d | 2019-09-16 | 2019-09-29 |  | 100% | PTS |
| 113 | 6.3.2 | Premier version | 14d | 2019-09-30 | 2019-10-13 | 92, 112 |  | PTS |
| 114 | 6.3.3 | Optimisation aéro | 14d | 2019-10-14 | 2019-10-27 | 113 |  | PTS |
| 115 | 6.3.4 | Seconde itération | 7d | 2019-10-28 | 2019-11-03 | 93, 114 |  | PTS |
| 116 | 6.3.5 | Fixation aéro | 14d | 2019-11-04 | 2019-11-17 | 115 |  | PTS |
| 117 | 6.4 | **Ailes** | 57d | 2019-09-09 | 2019-11-04 |  | 12% |  |
| 118 | 6.4.1 | Étude aéro arrière | 28d | 2019-09-09 | 2019-10-06 |  | 50% | MRI; ACO |
| 119 | 6.4.2 | Étude aéro avant | 36d | 2019-09-30 | 2019-11-04 |  |  | MRI; ACO |
| 120 | 6.4.3 | Volume enveloppe | 7d | 2019-09-30 | 2019-10-06 |  |  |  |
| 121 | 6.4.4 | Cas de charges des ailes | 7d | 2019-09-30 | 2019-10-06 |  |  |  |
| 122 | 6.4.5 | Structure interne | 21d | 2019-10-07 | 2019-10-27 | 121 |  |  |
| 123 | 6.4.6 | Méthode d'attache arrière | 14d | 2019-10-07 | 2019-10-20 | 121 |  | TCN |
| 124 | 6.5 | **Ouies** | 14d | 2019-09-30 | 2019-10-13 |  |  |  |
| 125 | 6.5.1 | Concept ouies | 14d | 2019-09-30 | 2019-10-13 |  |  |  |
| 126 | 6.6 | **Diffuseur** | 14d | 2019-09-30 | 2019-10-13 |  |  |  |
| 127 | 6.6.1 | Concept aéro | 14d | 2019-09-30 | 2019-10-13 |  |  | MRI; ACO |

Notes:
- 122: Pour dimenssionnement / Raideur du tube / Puis nombre de nervure
- 123: Etude concurrence / Soltuion légère et réglable

| ID | WBS | Task | Type | Duration | Start | Finish | Predecessors | Complete | Baseline start | Baseline finish | Baseline duration | Resources |
| --- | --- | --- | --- | --- | --- | --- | --- | --- | --- | --- | --- | --- |
| 128 | 7 | **Motorisation** |  | 51d | 2019-09-30 | 2019-11-19 |  | 5% | 2019-05-06 | 2019-05-20 | 15d |  |
| 129 | 7.1 | **Bride guillotine** |  | 21d | 2019-09-30 | 2019-10-20 |  |  |  |  |  |  |
| 130 | 7.1.1 | Analyser le diaphragme |  | 14d | 2019-09-30 | 2019-10-13 |  |  |  |  |  | CAD |
| 131 | 7.1.2 | CdCF bride guillotine |  | 7d | 2019-09-30 | 2019-10-06 |  |  |  |  |  | CAD |
| 132 | 7.1.3 | Choisir l'architecture |  | 7d | 2019-10-07 | 2019-10-13 |  |  |  |  |  | CAD |
| 133 | 7.1.4 | Dimensionner le système |  | 7d | 2019-10-14 | 2019-10-20 |  |  |  |  |  | CAD |
| 134 | 7.1.5 | CatPart |  | 7d | 2019-10-14 | 2019-10-20 |  |  |  |  |  | CAD |
| 135 | 7.2 | **Admission** |  | 15d | 2019-09-30 | 2019-10-14 |  |  |  |  |  |  |
| 136 | 7.2.1 | Longueur des tubulures |  | 7d | 2019-09-30 | 2019-10-06 |  |  |  |  |  | TLS |
| 137 | 7.2.2 | Contacter Michele Salvia |  | 7d | 2019-09-30 | 2019-10-06 |  |  |  |  |  | TLS |
| 138 | 7.2.3 | Choix matériau |  | 7d | 2019-10-07 | 2019-10-13 | 137 |  |  |  |  | TLS |
| 139 | 7.2.4 | Début du CATIA de l'admission |  | 7d | 2019-09-30 | 2019-10-06 |  |  |  |  |  | TLS |
| 140 | 7.2.5 | CatPart v1 |  | 7d | 2019-10-07 | 2019-10-13 | 139 |  |  |  |  | TLS |
| 141 | 7.2.6 | Audit Volvo | milestone | 0d | 2019-10-15 | 2019-10-15 |  |  |  |  |  | TLS |
| 142 | 7.3 | **Echappement** |  | 28d | 2019-09-30 | 2019-10-27 |  |  |  |  |  |  |
| 143 | 7.3.1 | Démarcher des partenaire |  | 7d | 2019-09-30 | 2019-10-06 |  |  |  |  |  | ASE |
| 144 | 7.3.2 | Trouver le diamètre Yoshimura |  | 7d | 2019-09-30 | 2019-10-06 |  |  |  |  |  | ASE |
| 145 | 7.3.3 | Récupération de celui d'Optimus?? |  | 14d | 2019-09-30 | 2019-10-13 |  |  |  |  |  | MJT |
| 146 | 7.3.4 | Suivre la modification du châssis en accord avec l'échappement |  | 14d | 2019-10-14 | 2019-10-27 |  |  |  |  |  | MJT |
| 147 | 7.4 | **Carto** |  | 7d | 2019-11-13 | 2019-11-19 |  |  |  |  |  |  |
| 148 | 7.4.1 | Prevoir passage au banc de Givors |  | 7d | 2019-11-13 | 2019-11-19 | 5 |  |  |  |  | MJT |
| 149 | 7.5 | **Refroidissement** |  | 21d | 2019-09-30 | 2019-10-20 |  | 33% |  |  |  |  |
| 150 | 7.5.1 | Terminer le choix ouies, radiateur |  | 7d | 2019-09-30 | 2019-10-06 |  | 100% |  |  |  | ASE |
| 151 | 7.5.2 | Etude refroidissement |  | 7d | 2019-10-07 | 2019-10-13 |  |  |  |  |  | ASE |
| 152 | 7.5.3 | Dimensionner le radiateur |  | 7d | 2019-10-14 | 2019-10-20 |  |  |  |  |  | ASE |

Notes:
- 130: Attention au pb de capteur
- 151: Avec deux radiateurs découplables?
- 152: Avec deux radiateurs découplables?

| ID | WBS | Task | Duration | Start | Finish | Predecessors | Complete | Baseline start | Baseline finish | Baseline duration | Resources |
| --- | --- | --- | --- | --- | --- | --- | --- | --- | --- | --- | --- |
| 153 | 7.6 | **Circuit d'essence** | 14d | 2019-10-07 | 2019-10-20 |  |  |  |  |  |  |
| 154 | 7.6.1 | Commande rle tube de remplissage | 7d | 2019-10-07 | 2019-10-13 |  |  |  |  |  | ASE |
| 155 | 7.6.2 | Circuit d'essence | 7d | 2019-10-07 | 2019-10-13 |  |  |  |  |  | ASE |
| 156 | 7.6.3 | Ou placer le circuit | 7d | 2019-10-14 | 2019-10-20 |  |  |  |  |  | ASE |
| 157 | 7.7 | **Transmission secondaire** | 14d | 2019-09-30 | 2019-10-13 |  |  |  |  |  |  |
| 158 | 7.7.1 | Analyser le déplacement des axes | 7d | 2019-09-30 | 2019-10-06 |  |  |  |  |  | VBU |
| 159 | 7.7.2 | Préssenter les cas de charges | 7d | 2019-09-30 | 2019-10-06 |  |  |  |  |  | VBU |
| 160 | 7.7.3 | CdCF quantifié du système | 7d | 2019-09-30 | 2019-10-06 |  |  |  |  |  | VBU |
| 161 | 7.7.4 | Efforts subis par les axes de transmission | 7d | 2019-10-07 | 2019-10-13 |  |  |  |  |  | VBU |
| 162 | 8 | **SEISM** | 84d | 2019-09-02 | 2019-11-24 |  | 19% | 2019-05-10 | 2019-05-14 | 5d |  |
| 163 | 8.1 | **Faisceau** | 84d | 2019-09-02 | 2019-11-24 |  | 31% |  |  |  |  |
| 164 | 8.1.1 | Architecture faisceau | 14d | 2019-09-02 | 2019-09-15 |  | 100% |  |  |  | CLS |
| 165 | 8.1.2 | Schema faisceau | 28d | 2019-09-16 | 2019-10-13 | 164 | 100% |  |  |  | CLS |
| 166 | 8.1.3 | Batterie | 14d | 2019-09-30 | 2019-10-13 |  |  |  |  |  | CLS |
| 167 | 8.1.4 | Dimensionnement câble | 14d | 2019-10-07 | 2019-10-20 |  |  |  |  |  | CLS |
| 168 | 8.1.5 | Placer les boîtes | 14d | 2019-10-14 | 2019-10-27 |  |  |  |  |  | CLS |
| 169 | 8.1.6 | Contacter Souriaux | 7d | 2019-09-16 | 2019-09-22 |  |  |  |  |  | CLS |
| 170 | 8.1.7 | Choix connecteur | 14d | 2019-10-14 | 2019-10-27 | 169 |  |  |  |  | CLS |
| 171 | 8.1.8 | Modèle CATIA | 28d | 2019-10-28 | 2019-11-24 | 168, 170 |  |  |  |  | CLS |
| 172 | 8.2 | **Passage de rapport** | 70d | 2019-09-02 | 2019-11-10 |  | 5% |  |  |  |  |
| 173 | 8.2.1 | Dimensionnement moteur | 28d | 2019-09-02 | 2019-09-29 |  | 10% |  |  |  | BMA |
| 174 | 8.2.2 | Dimensionnement réducteur | 28d | 2019-09-02 | 2019-09-29 |  | 10% |  |  |  | BMA |
| 175 | 8.2.3 | Reprendre le code | 28d | 2019-09-30 | 2019-10-27 | 173, 174 |  |  |  |  | BMA |
| 176 | 8.2.4 | Shield | 28d | 2019-10-14 | 2019-11-10 |  |  |  |  |  | BMA |

Notes:
- 157: Ressources: / ASE et une recrue semble correct et moins risqué que deux recrues. / Une des recrues sera donc affecté au circuit d'essence.
- 165: HV / LV / Acquisition de données
- 174: Choisir entre Atomix et Optimus
- 176: Inclure la connection CAN
