# Gantt EPSA

Schedule from GanttProject, 2019-04-03 to 2020-06-24, baseline: 15_05_2019.
EPSA

## Calendars

- Project calendar: Mon-Fri working; Sat-Sun off.

## Resources

| Resource |
| --- |
| MJT |
| ARZ |
| TLS |
| PTN |
| CMI |
| TMN |
| PTS |
| ASE |
| IGH |
| EBA |
| GLD |
| CAD |
| MKI |
| MSO |
| PAX |
| ADT |
| VDA |
| PCK |
| CLS |
| RMN |
| BMA |

## Schedule

| ID | WBS | Task | Type | Duration | Start | Finish | Predecessors | Complete | Baseline start | Baseline finish | Baseline duration | Resources |
| --- | --- | --- | --- | --- | --- | --- | --- | --- | --- | --- | --- | --- |
| 1 | 1 | **Tops** |  | 320d | 2019-04-03 | 2020-06-23 |  |  | 2019-04-03 | 2020-06-23 | 320d |  |
| 2 | 1.1 | Top Projet | milestone | 0d | 2019-04-03 | 2019-04-03 |  |  | 2019-04-03 | 2019-04-03 | 0d |  |
| 3 | 1.2 | RVP2 | milestone | 0d | 2019-04-03 | 2019-04-03 |  |  | 2019-04-03 | 2019-04-03 | 0d |  |
| 4 | 1.3 | Roll Out | milestone | 0d | 2019-04-10 | 2019-04-10 |  |  | 2019-04-10 | 2019-04-10 | 0d |  |
| 5 | 1.4 | Top Prédim | milestone | 0d | 2019-06-12 | 2019-06-12 |  |  | 2019-06-12 | 2019-06-12 | 0d |  |
| 6 | 1.5 | Top Appro | milestone | 0d | 2019-06-27 | 2019-06-27 |  |  | 2019-06-27 | 2019-06-27 | 0d |  |
| 7 | 1.6 | Top Saison | milestone | 0d | 2019-09-30 | 2019-09-30 |  |  | 2019-09-30 | 2019-09-30 | 0d |  |
| 8 | 1.7 | Top Maquette | milestone | 0d | 2019-05-01 | 2019-05-01 |  |  | 2019-05-01 | 2019-05-01 | 0d |  |
| 9 | 1.8 | Top Synthèse | milestone | 0d | 2019-10-02 | 2019-10-02 |  |  | 2019-10-02 | 2019-10-02 | 0d |  |
| 10 | 1.9 | Top Copeau 1 | milestone | 0d | 2019-11-06 | 2019-11-06 |  |  | 2019-11-06 | 2019-11-06 | 0d |  |
| 11 | 1.10 | Top Copeau 2 | milestone | 0d | 2019-11-20 | 2019-11-20 |  |  | 2019-11-20 | 2019-11-20 | 0d |  |
| 12 | 1.11 | Top Organe | milestone | 0d | 2020-02-05 | 2020-02-05 |  |  | 2020-02-05 | 2020-02-05 | 0d |  |
| 13 | 1.12 | Top Véhicule | milestone | 0d | 2020-02-19 | 2020-02-19 |  |  | 2020-02-19 | 2020-02-19 | 0d |  |
| 14 | 1.13 | Top Moteur | milestone | 0d | 2020-03-04 | 2020-03-04 |  |  | 2020-03-04 | 2020-03-04 | 0d |  |
| 15 | 1.14 | Top Qualif | milestone | 0d | 2020-03-17 | 2020-03-17 |  |  | 2020-03-17 | 2020-03-17 | 0d |  |
| 16 | 1.15 | Top Compet | milestone | 0d | 2020-06-24 | 2020-06-24 |  |  | 2020-06-24 | 2020-06-24 | 0d |  |
| 17 | 2 | Livrables |  | 12d | 2019-05-22 | 2019-06-06 |  |  | 2019-05-08 | 2019-06-04 | 20d |  |
| 18 | 3 | Carnet de conception |  | 40d | 2019-07-01 | 2019-08-23 |  |  |  |  |  | TLS |
| 19 | 4 | **Frame** |  | 101d | 2019-05-22 | 2019-10-09 |  | 31% | 2019-05-08 | 2019-05-22 | 11d |  |
| 20 | 4.1 | Continuer test chassis surfacique |  | 33d | 2019-05-22 | 2019-07-05 |  | 80% |  |  |  |  |
| 21 | 4.2 | Cellule avant |  | 10d | 2019-08-01 | 2019-08-14 |  |  |  |  |  | CMI |
| 22 | 4.3 | Cellule arrière |  | 10d | 2019-08-15 | 2019-08-28 | 21 |  |  |  |  | CMI |
| 23 | 4.4 | Cellule arrière terminée |  | 10d | 2019-08-29 | 2019-09-11 | 22 |  |  |  |  | CMI |
| 24 | 4.5 | Châssis complet |  | 20d | 2019-09-12 | 2019-10-09 | 23 |  |  |  |  | CMI |

Notes:
- 22: Sans suspensions
- 23: Retouche echappement

| ID | WBS | Task | Duration | Start | Finish | Predecessors | Complete | Baseline start | Baseline finish | Baseline duration | Resources |
| --- | --- | --- | --- | --- | --- | --- | --- | --- | --- | --- | --- |
| 25 | 5 | **Aéro** | 70d | 2019-07-01 | 2019-10-04 |  | 1% |  |  |  |  |
| 26 | 5.1 | **Design du kit** | 70d | 2019-07-01 | 2019-10-04 |  |  |  |  |  |  |
| 27 | 5.1.1 | **Aile arrière** | 40d | 2019-07-01 | 2019-08-23 |  |  |  |  |  |  |
| 28 | 5.1.1.1 | Methode de fixation | 10d | 2019-07-01 | 2019-07-12 |  |  |  |  |  |  |
| 29 | 5.1.1.2 | Insert aile arrière | 10d | 2019-07-15 | 2019-07-26 | 28 |  |  |  |  |  |
| 30 | 5.1.1.3 | Calculs de déflection | 30d | 2019-07-15 | 2019-08-23 | 28 |  |  |  |  |  |
| 31 | 5.1.2 | **Aile avant** | 40d | 2019-07-29 | 2019-09-20 |  |  |  |  |  |  |
| 32 | 5.1.2.1 | Methode de fixation | 10d | 2019-07-29 | 2019-08-09 |  |  |  |  |  |  |
| 33 | 5.1.2.2 | Insert ailes avant | 15d | 2019-08-12 | 2019-08-30 | 32 |  |  |  |  |  |
| 34 | 5.1.2.3 | Déflection | 30d | 2019-08-12 | 2019-09-20 | 32 |  |  |  |  |  |
| 35 | 5.1.3 | **Ouies** | 55d | 2019-07-01 | 2019-09-13 |  |  |  |  |  |  |
| 36 | 5.1.3.1 | Concept ouies | 10d | 2019-07-01 | 2019-07-12 |  |  |  |  |  | PTS |
| 37 | 5.1.3.2 | Dessin final | 10d | 2019-09-02 | 2019-09-13 |  |  |  |  |  | PTS |
| 38 | 5.1.4 | Carrosserie | 15d | 2019-09-02 | 2019-09-20 |  |  |  |  |  | PTS |
| 39 | 5.1.5 | Fond-plat | 10d | 2019-09-23 | 2019-10-04 | 38 |  |  |  |  | PTS |
| 40 | 5.2 | **Prototypage** | 10d | 2019-09-02 | 2019-09-13 |  | 10% |  |  |  |  |
| 41 | 5.2.1 | Proto toile cirée | 10d | 2019-09-02 | 2019-09-13 |  | 10% |  |  |  |  |
| 42 | 6 | **LAS** | 60d | 2019-07-01 | 2019-09-20 |  |  | 2019-05-08 | 2019-05-28 | 15d |  |
| 43 | 6.1 | **Point de LAS** | 25d | 2019-07-01 | 2019-08-02 |  |  |  |  |  |  |
| 44 | 6.1.1 | LAS avant | 20d | 2019-07-01 | 2019-07-26 |  |  |  |  |  |  |
| 45 | 6.1.2 | LAS arrière | 20d | 2019-07-08 | 2019-08-02 |  |  |  |  |  |  |
| 46 | 6.2 | **Pneu** | 20d | 2019-07-01 | 2019-07-26 |  |  | 2019-05-08 | 2019-05-28 | 15d |  |
| 47 | 6.2.1 | Identifier les pneus dispo | 10d | 2019-07-01 | 2019-07-12 |  |  |  |  |  | MSO |
| 48 | 6.2.2 | Choisir les pneus | 10d | 2019-07-15 | 2019-07-26 | 47 |  |  |  |  | MSO |

| ID | WBS | Task | Duration | Start | Finish | Predecessors | Baseline start | Baseline finish | Baseline duration | Resources |
| --- | --- | --- | --- | --- | --- | --- | --- | --- | --- | --- |
| 49 | 6.3 | **Suspension** | 15d | 2019-08-05 | 2019-08-23 |  |  |  |  |  |
| 50 | 6.3.1 | Choix composants | 15d | 2019-08-05 | 2019-08-23 | 45 |  |  |  | PAX |
| 51 | 6.4 | **Barre anti rouli** | 15d | 2019-08-05 | 2019-08-23 |  |  |  |  |  |
| 52 | 6.4.1 | Conception détaillée | 15d | 2019-08-05 | 2019-08-23 | 45 |  |  |  | PAX |
| 53 | 6.5 | **Colonne de direction** | 60d | 2019-07-01 | 2019-09-20 |  |  |  |  |  |
| 54 | 6.5.1 | Se renseigner | 5d | 2019-07-01 | 2019-07-05 |  |  |  |  | PCK |
| 55 | 6.5.2 | Nombre de cardan | 10d | 2019-07-03 | 2019-07-16 |  |  |  |  | PCK |
| 56 | 6.5.3 | Colonne crémaillère | 10d | 2019-07-17 | 2019-07-30 | 55 |  |  |  | PCK |
| 57 | 6.5.4 | Biellette | 15d | 2019-09-02 | 2019-09-20 |  |  |  |  |  |
| 58 | 6.6 | **Système de freinage** | 60d | 2019-07-01 | 2019-09-20 |  |  |  |  |  |
| 59 | 6.6.1 | Contraintes | 5d | 2019-07-01 | 2019-07-05 |  |  |  |  | ADT |
| 60 | 6.6.2 | Système de freinage | 35d | 2019-07-08 | 2019-08-23 | 59 |  |  |  | ADT |
| 61 | 6.6.3 | Pédalier | 20d | 2019-08-26 | 2019-09-20 | 60 |  |  |  | ADT |
| 62 | 7 | **Motorisation** | 57d | 2019-07-01 | 2019-09-17 |  | 2019-05-06 | 2019-05-24 | 15d |  |
| 63 | 7.1 | **Admission** | 57d | 2019-07-01 | 2019-09-17 |  | 2019-05-08 | 2019-05-21 | 10d |  |
| 64 | 7.1.1 | Architecture à définir | 7d | 2019-07-01 | 2019-07-09 |  | 2019-05-08 | 2019-05-21 | 10d | TLS |
| 65 | 7.1.2 | Bride guillotine | 50d | 2019-07-10 | 2019-09-17 | 64 |  |  |  | TLS |
| 66 | 7.1.3 | Admission | 50d | 2019-07-10 | 2019-09-17 | 64 |  |  |  | TLS |
| 67 | 7.2 | **Echappement** | 45d | 2019-07-01 | 2019-08-30 |  |  |  |  |  |
| 68 | 7.2.1 | Architecture à définir | 5d | 2019-07-01 | 2019-07-05 |  |  |  |  | MJT |
| 69 | 7.2.2 | Dessiner l'échappement | 40d | 2019-07-08 | 2019-08-30 | 68 |  |  |  | MJT |
| 70 | 7.3 | **Refroidissement** | 15d | 2019-07-01 | 2019-07-19 |  | 2019-05-20 | 2019-05-24 | 5d |  |
| 71 | 7.3.1 | Architecture à définir | 5d | 2019-07-01 | 2019-07-05 |  | 2019-05-20 | 2019-05-24 | 5d | ASE |
| 72 | 7.3.2 | Dimenssionnement | 10d | 2019-07-08 | 2019-07-19 | 71 |  |  |  | ASE |

Notes:
- 64: faire attention à l'aéro
- 68: faire attention à l'aéro
- 71: A définir en fonction du choix aéro

| ID | WBS | Task | Duration | Start | Finish | Predecessors | Baseline start | Baseline finish | Baseline duration | Resources |
| --- | --- | --- | --- | --- | --- | --- | --- | --- | --- | --- |
| 73 | 7.4 | **Transmission secondaire** | 45d | 2019-07-01 | 2019-08-30 |  |  |  |  |  |
| 74 | 7.4.1 | Architecture | 45d | 2019-07-01 | 2019-08-30 |  |  |  |  |  |
| 75 | 8 | **SEISM** | 86d | 2019-07-01 | 2019-10-28 |  | 2019-05-10 | 2019-05-16 | 5d |  |
| 76 | 8.1 | **Démarchage** | 5d | 2019-07-01 | 2019-07-05 |  | 2019-05-10 | 2019-05-16 | 5d |  |
| 77 | 8.1.1 | Relancer pour la caméra | 5d | 2019-07-01 | 2019-07-05 |  |  |  |  |  |
| 78 | 8.2 | **Faisceau** | 40d | 2019-07-01 | 2019-08-23 |  |  |  |  |  |
| 79 | 8.2.1 | Architecture Faisceau | 5d | 2019-07-01 | 2019-07-05 |  |  |  |  | CLS |
| 80 | 8.2.2 | Faisceau LV | 5d | 2019-07-01 | 2019-07-05 |  |  |  |  | CLS |
| 81 | 8.2.3 | Faisceau HV | 15d | 2019-07-08 | 2019-07-26 | 79, 80 |  |  |  | CLS |
| 82 | 8.2.4 | Module Electrical CATIA | 20d | 2019-07-29 | 2019-08-23 | 80, 81 |  |  |  | CLS |
| 83 | 8.2.5 | Batterie | 10d | 2019-07-29 | 2019-08-09 | 81 |  |  |  | CLS |
| 84 | 8.3 | **Tableau de bord** | 30d | 2019-07-08 | 2019-08-16 |  |  |  |  |  |
| 85 | 8.3.1 | Architecture | 15d | 2019-07-08 | 2019-07-26 |  |  |  |  | RMN |
| 86 | 8.3.2 | Test des écrans | 15d | 2019-07-29 | 2019-08-16 | 85 |  |  |  |  |
| 87 | 8.4 | **Passage de rapport** | 35d | 2019-07-01 | 2019-08-16 |  |  |  |  |  |
| 88 | 8.4.1 | Dimensionnement moteur | 15d | 2019-07-01 | 2019-07-19 |  |  |  |  |  |
| 89 | 8.4.2 | Commande de boîte | 20d | 2019-07-22 | 2019-08-16 | 88 |  |  |  | BMA |
| 90 | 8.5 | **Télémétrie** | 40d | 2019-07-01 | 2019-08-23 |  |  |  |  |  |
| 91 | 8.5.1 | Architecture | 5d | 2019-07-01 | 2019-07-05 |  |  |  |  | CLS |
| 92 | 8.5.2 | Choix capteurs | 35d | 2019-07-08 | 2019-08-23 | 91 |  |  |  | CLS |
| 93 | 8.6 | **Communication pilote-stand** | 20d | 2019-10-01 | 2019-10-28 |  |  |  |  |  |
| 94 | 8.6.1 | Architecture | 20d | 2019-10-01 | 2019-10-28 |  |  |  |  |  |

Notes:
- 85: TdB/Volant équipé
- 88: Moteur / Rapport de réduction
