# Gantt EPSA

Schedule from GanttProject, 2019-04-03 to 2020-06-24, baseline: 15_05_2019.
EPSA

## Calendars

- Project calendar: Mon-Fri working; Sat-Sun off.

## Resources

| Resource |
| --- |
| MJT |
| ARZ |
| TLS |
| PTN |
| CMI |
| TMN |
| PTS |
| ASE |
| IGH |
| EBA |
| GLD |
| CAD |
| MKI |
| MSO |
| PAX |
| ADT |
| VDA |
| PCK |
| CLS |
| RMN |
| BMA |

## Schedule

| ID | WBS | Task | Type | Duration | Start | Finish | Predecessors | Complete | Baseline start | Baseline finish | Baseline duration | Resources |
| --- | --- | --- | --- | --- | --- | --- | --- | --- | --- | --- | --- | --- |
| 1 | 1 | **Tops** |  | 320d | 2019-04-03 | 2020-06-23 |  |  | 2019-04-03 | 2020-06-23 | 320d |  |
| 2 | 1.1 | Top Projet | milestone | 0d | 2019-04-03 | 2019-04-03 |  |  | 2019-04-03 | 2019-04-03 | 0d |  |
| 3 | 1.2 | RVP2 | milestone | 0d | 2019-04-03 | 2019-04-03 |  |  | 2019-04-03 | 2019-04-03 | 0d |  |
| 4 | 1.3 | Roll Out | milestone | 0d | 2019-04-10 | 2019-04-10 |  |  | 2019-04-10 | 2019-04-10 | 0d |  |
| 5 | 1.4 | Top Prédim | milestone | 0d | 2019-06-12 | 2019-06-12 |  |  | 2019-06-12 | 2019-06-12 | 0d |  |
| 6 | 1.5 | Top Appro | milestone | 0d | 2019-06-27 | 2019-06-27 |  |  | 2019-06-27 | 2019-06-27 | 0d |  |
| 7 | 1.6 | Top Saison | milestone | 0d | 2019-09-30 | 2019-09-30 |  |  | 2019-09-30 | 2019-09-30 | 0d |  |
| 8 | 1.7 | Top Maquette | milestone | 0d | 2019-05-01 | 2019-05-01 |  |  | 2019-05-01 | 2019-05-01 | 0d |  |
| 9 | 1.8 | Top Synthèse | milestone | 0d | 2019-10-02 | 2019-10-02 |  |  | 2019-10-02 | 2019-10-02 | 0d |  |
| 10 | 1.9 | Top Copeau 1 | milestone | 0d | 2019-11-06 | 2019-11-06 |  |  | 2019-11-06 | 2019-11-06 | 0d |  |
| 11 | 1.10 | Top Copeau 2 | milestone | 0d | 2019-11-20 | 2019-11-20 |  |  | 2019-11-20 | 2019-11-20 | 0d |  |
| 12 | 1.11 | Top Organe | milestone | 0d | 2020-02-05 | 2020-02-05 |  |  | 2020-02-05 | 2020-02-05 | 0d |  |
| 13 | 1.12 | Top Véhicule | milestone | 0d | 2020-02-19 | 2020-02-19 |  |  | 2020-02-19 | 2020-02-19 | 0d |  |
| 14 | 1.13 | Top Moteur | milestone | 0d | 2020-03-04 | 2020-03-04 |  |  | 2020-03-04 | 2020-03-04 | 0d |  |
| 15 | 1.14 | Top Qualif | milestone | 0d | 2020-03-17 | 2020-03-17 |  |  | 2020-03-17 | 2020-03-17 | 0d |  |
| 16 | 1.15 | Top Compet | milestone | 0d | 2020-06-24 | 2020-06-24 |  |  | 2020-06-24 | 2020-06-24 | 0d |  |
| 17 | 2 | Livrables |  | 12d | 2019-05-22 | 2019-06-06 |  |  | 2019-05-08 | 2019-06-04 | 20d |  |
| 18 | 3 | Carnet de conception |  | 40d | 2019-07-01 | 2019-08-23 |  |  |  |  |  | TLS |
| 19 | 4 | Nomenclature |  | 30d | 2019-07-18 | 2019-08-28 |  |  |  |  |  | TLS |
| 20 | 5 | **Frame** |  | 101d | 2019-05-22 | 2019-10-09 |  | 32% | 2019-05-08 | 2019-05-22 | 11d |  |
| 21 | 5.1 | Continuer test chassis surfacique |  | 33d | 2019-05-22 | 2019-07-05 |  | 80% |  |  |  |  |
| 22 | 5.2 | Dessin préliminaire |  | 5d | 2019-07-15 | 2019-07-19 |  | 50% |  |  |  |  |
| 23 | 5.3 | Cellule avant |  | 10d | 2019-08-01 | 2019-08-14 |  |  |  |  |  | CMI |
| 24 | 5.4 | Cellule arrière |  | 10d | 2019-08-15 | 2019-08-28 | 23 |  |  |  |  | CMI |
| 25 | 5.5 | Cellule arrière terminée |  | 10d | 2019-08-29 | 2019-09-11 | 24 |  |  |  |  | CMI |
| 26 | 5.6 | Châssis complet |  | 20d | 2019-09-12 | 2019-10-09 | 25 |  |  |  |  | CMI |

Notes:
- 24: Sans suspensions
- 25: Retouche echappement

| ID | WBS | Task | Duration | Start | Finish | Predecessors | Complete | Baseline start | Baseline finish | Baseline duration | Resources |
| --- | --- | --- | --- | --- | --- | --- | --- | --- | --- | --- | --- |
| 27 | 6 | **Aéro** | 70d | 2019-07-01 | 2019-10-04 |  | 1% |  |  |  |  |
| 28 | 6.1 | **Design du kit** | 70d | 2019-07-01 | 2019-10-04 |  |  |  |  |  |  |
| 29 | 6.1.1 | **Aile arrière** | 21d | 2019-07-01 | 2019-07-29 |  |  |  |  |  |  |
| 30 | 6.1.1.1 | Methode de fixation | 10d | 2019-07-01 | 2019-07-12 |  |  |  |  |  |  |
| 31 | 6.1.1.2 | Etude concurrence FSN | 2d | 2019-07-12 | 2019-07-15 |  |  |  |  |  |  |
| 32 | 6.1.1.3 | Insert aile arrière | 10d | 2019-07-16 | 2019-07-29 | 30, 31 |  |  |  |  |  |
| 33 | 6.1.2 | **Aile avant** | 50d | 2019-07-15 | 2019-09-20 |  |  |  |  |  |  |
| 34 | 6.1.2.1 | Etude concurrence FSN | 30d | 2019-07-15 | 2019-08-23 |  |  |  |  |  |  |
| 35 | 6.1.2.2 | Dessin de l'aile en collaboration avec les italiens | 10d | 2019-07-15 | 2019-07-26 |  |  |  |  |  |  |
| 36 | 6.1.2.3 | Methode de fixation | 10d | 2019-07-29 | 2019-08-09 | 35 |  |  |  |  |  |
| 37 | 6.1.2.4 | Insert ailes avant | 15d | 2019-08-12 | 2019-08-30 | 36 |  |  |  |  |  |
| 38 | 6.1.2.5 | Déflection | 30d | 2019-08-12 | 2019-09-20 | 36 |  |  |  |  |  |
| 39 | 6.1.3 | **Ouies** | 55d | 2019-07-01 | 2019-09-13 |  |  |  |  |  |  |
| 40 | 6.1.3.1 | Concept ouies | 10d | 2019-07-01 | 2019-07-12 |  |  |  |  |  | PTS |
| 41 | 6.1.3.2 | Dessin final | 10d | 2019-09-02 | 2019-09-13 |  |  |  |  |  | PTS |
| 42 | 6.1.4 | Carrosserie | 15d | 2019-09-02 | 2019-09-20 |  |  |  |  |  | PTS |
| 43 | 6.1.5 | Fond-plat | 10d | 2019-09-23 | 2019-10-04 | 42 |  |  |  |  | PTS |
| 44 | 6.2 | **Prototypage** | 10d | 2019-09-02 | 2019-09-13 |  | 10% |  |  |  |  |
| 45 | 6.2.1 | Proto toile cirée | 10d | 2019-09-02 | 2019-09-13 |  | 10% |  |  |  |  |
| 46 | 7 | **LAS** | 60d | 2019-07-01 | 2019-09-20 |  | 3% | 2019-05-08 | 2019-05-28 | 15d |  |
| 47 | 7.1 | **Point de LAS** | 45d | 2019-07-01 | 2019-08-30 |  |  |  |  |  |  |
| 48 | 7.1.1 | LAS avant | 40d | 2019-07-01 | 2019-08-23 |  |  |  |  |  |  |
| 49 | 7.1.2 | LAS arrière | 40d | 2019-07-08 | 2019-08-30 |  |  |  |  |  |  |
| 50 | 7.2 | **Pneu** | 25d | 2019-07-01 | 2019-08-02 |  | 30% | 2019-05-08 | 2019-05-28 | 15d |  |
| 51 | 7.2.1 | Identifier les pneus dispo | 15d | 2019-07-01 | 2019-07-19 |  | 50% |  |  |  | MSO |
| 52 | 7.2.2 | Choisir les pneus | 10d | 2019-07-22 | 2019-08-02 | 51 |  |  |  |  | MSO |

| ID | WBS | Task | Duration | Start | Finish | Predecessors | Complete | Baseline start | Baseline finish | Baseline duration | Resources |
| --- | --- | --- | --- | --- | --- | --- | --- | --- | --- | --- | --- |
| 53 | 7.3 | **Suspension** | 15d | 2019-09-02 | 2019-09-20 |  |  |  |  |  |  |
| 54 | 7.3.1 | Choix composants | 15d | 2019-09-02 | 2019-09-20 | 49 |  |  |  |  | PAX |
| 55 | 7.4 | **Barre anti rouli** | 15d | 2019-09-02 | 2019-09-20 |  |  |  |  |  |  |
| 56 | 7.4.1 | Conception détaillée | 15d | 2019-09-02 | 2019-09-20 | 49 |  |  |  |  | PAX |
| 57 | 7.5 | **Colonne de direction** | 60d | 2019-07-01 | 2019-09-20 |  |  |  |  |  |  |
| 58 | 7.5.1 | Se renseigner | 5d | 2019-07-01 | 2019-07-05 |  |  |  |  |  | PCK |
| 59 | 7.5.2 | Nombre de cardan | 10d | 2019-07-03 | 2019-07-16 |  |  |  |  |  | PCK |
| 60 | 7.5.3 | Colonne crémaillère | 10d | 2019-07-17 | 2019-07-30 | 59 |  |  |  |  | PCK |
| 61 | 7.5.4 | Biellette | 15d | 2019-09-02 | 2019-09-20 |  |  |  |  |  |  |
| 62 | 7.6 | **Système de freinage** | 60d | 2019-07-01 | 2019-09-20 |  |  |  |  |  |  |
| 63 | 7.6.1 | Contraintes | 5d | 2019-07-01 | 2019-07-05 |  |  |  |  |  | ADT |
| 64 | 7.6.2 | Système de freinage | 35d | 2019-07-08 | 2019-08-23 | 63 |  |  |  |  | ADT |
| 65 | 7.6.3 | Pédalier | 20d | 2019-08-26 | 2019-09-20 | 64 |  |  |  |  | ADT |
| 66 | 8 | **Motorisation** | 65d | 2019-07-01 | 2019-09-27 |  | 7% | 2019-05-06 | 2019-05-24 | 15d |  |
| 67 | 8.1 | **Moteur** | 10d | 2019-07-15 | 2019-07-26 |  |  |  |  |  |  |
| 68 | 8.1.1 | Position du moteur | 10d | 2019-07-15 | 2019-07-26 |  |  |  |  |  |  |
| 69 | 8.2 | **Admission** | 65d | 2019-07-01 | 2019-09-27 |  | 6% | 2019-05-08 | 2019-05-21 | 10d |  |
| 70 | 8.2.1 | Architecture à définir | 15d | 2019-07-01 | 2019-07-19 |  | 50% | 2019-05-08 | 2019-05-21 | 10d | TLS |
| 71 | 8.2.2 | Bride guillotine | 50d | 2019-07-22 | 2019-09-27 | 70 |  |  |  |  | TLS |
| 72 | 8.2.3 | Admission | 50d | 2019-07-22 | 2019-09-27 | 70 |  |  |  |  | TLS |
| 73 | 8.3 | **Echappement** | 45d | 2019-07-01 | 2019-08-30 |  | 11% |  |  |  |  |
| 74 | 8.3.1 | Architecture à définir | 5d | 2019-07-01 | 2019-07-05 |  | 100% |  |  |  | MJT |
| 75 | 8.3.2 | Dessiner l'échappement | 40d | 2019-07-08 | 2019-08-30 | 74 |  |  |  |  | MJT |
| 76 | 8.4 | **Refroidissement** | 18d | 2019-07-01 | 2019-07-24 |  | 27% | 2019-05-20 | 2019-05-24 | 5d |  |
| 77 | 8.4.1 | Architecture à définir | 5d | 2019-07-01 | 2019-07-05 |  | 100% | 2019-05-20 | 2019-05-24 | 5d | ASE |
| 78 | 8.4.2 | Dimenssionnement | 13d | 2019-07-08 | 2019-07-24 | 77 |  |  |  |  | ASE |

Notes:
- 70: faire attention à l'aéro
- 74: faire attention à l'aéro
- 77: A définir en fonction du choix aéro

| ID | WBS | Task | Duration | Start | Finish | Predecessors | Baseline start | Baseline finish | Baseline duration | Resources |
| --- | --- | --- | --- | --- | --- | --- | --- | --- | --- | --- |
| 79 | 8.5 | **Transmission secondaire** | 45d | 2019-07-01 | 2019-08-30 |  |  |  |  |  |
| 80 | 8.5.1 | Architecture | 45d | 2019-07-01 | 2019-08-30 |  |  |  |  |  |
| 81 | 9 | **SEISM** | 86d | 2019-07-01 | 2019-10-28 |  | 2019-05-10 | 2019-05-16 | 5d |  |
| 82 | 9.1 | **Démarchage** | 5d | 2019-07-01 | 2019-07-05 |  | 2019-05-10 | 2019-05-16 | 5d |  |
| 83 | 9.1.1 | Relancer pour la caméra | 5d | 2019-07-01 | 2019-07-05 |  |  |  |  |  |
| 84 | 9.2 | **Faisceau** | 40d | 2019-07-01 | 2019-08-23 |  |  |  |  |  |
| 85 | 9.2.1 | Architecture Faisceau | 5d | 2019-07-01 | 2019-07-05 |  |  |  |  | CLS |
| 86 | 9.2.2 | Faisceau LV | 5d | 2019-07-01 | 2019-07-05 |  |  |  |  | CLS |
| 87 | 9.2.3 | Faisceau HV | 15d | 2019-07-08 | 2019-07-26 | 85, 86 |  |  |  | CLS |
| 88 | 9.2.4 | Module Electrical CATIA | 20d | 2019-07-29 | 2019-08-23 | 86, 87 |  |  |  | CLS |
| 89 | 9.2.5 | Batterie | 10d | 2019-07-29 | 2019-08-09 | 87 |  |  |  | CLS |
| 90 | 9.3 | **Tableau de bord** | 30d | 2019-07-08 | 2019-08-16 |  |  |  |  |  |
| 91 | 9.3.1 | Architecture | 15d | 2019-07-08 | 2019-07-26 |  |  |  |  | RMN |
| 92 | 9.3.2 | Test des écrans | 15d | 2019-07-29 | 2019-08-16 | 91 |  |  |  |  |
| 93 | 9.4 | **Passage de rapport** | 35d | 2019-07-01 | 2019-08-16 |  |  |  |  |  |
| 94 | 9.4.1 | Dimensionnement moteur | 15d | 2019-07-01 | 2019-07-19 |  |  |  |  |  |
| 95 | 9.4.2 | Commande de boîte | 20d | 2019-07-22 | 2019-08-16 | 94 |  |  |  | BMA |
| 96 | 9.5 | **Télémétrie** | 40d | 2019-07-01 | 2019-08-23 |  |  |  |  |  |
| 97 | 9.5.1 | Architecture | 5d | 2019-07-01 | 2019-07-05 |  |  |  |  | CLS |
| 98 | 9.5.2 | Choix capteurs | 35d | 2019-07-08 | 2019-08-23 | 97 |  |  |  | CLS |
| 99 | 9.6 | **Communication pilote-stand** | 20d | 2019-10-01 | 2019-10-28 |  |  |  |  |  |
| 100 | 9.6.1 | Architecture | 20d | 2019-10-01 | 2019-10-28 |  |  |  |  |  |

Notes:
- 91: TdB/Volant équipé
- 94: Moteur / Rapport de réduction
