# Gantt EPSA

Schedule from GanttProject, 2019-06-27 to 2020-09-30, baseline: 15_05_2019.
EPSA

## Calendars

- Project calendar: Mon-Sun working.

## Resources

| Resource |
| --- |
| MJT |
| ARZ |
| TLS |
| PTN |
| CMI |
| NGO |
| MRI |
| ACO |
| TMN |
| PTS |
| TCN |
| ASE |
| IGH |
| EBA |
| GLD |
| CAD |
| MKI |
| MSO |
| PAX |
| EPZ |
| SGX |
| JMN |
| CLS |
| RMN |
| BMA |

## Schedule

| ID | WBS | Task | Type | Duration | Start | Finish | Predecessors | Baseline start | Baseline finish | Baseline duration | Resources |
| --- | --- | --- | --- | --- | --- | --- | --- | --- | --- | --- | --- |
| 1 | 1 | **Tops** |  | 363d | 2019-06-27 | 2020-06-23 |  | 2019-04-03 | 2020-02-16 | 320d |  |
| 2 | 1.1 | Top Appro | milestone | 0d | 2019-06-27 | 2019-06-27 |  | 2019-06-27 | 2019-06-27 | 0d |  |
| 3 | 1.2 | Top Saison | milestone | 0d | 2019-09-30 | 2019-09-30 |  | 2019-09-30 | 2019-09-30 | 0d |  |
| 4 | 1.3 | Top Synthèse | milestone | 0d | 2019-10-16 | 2019-10-16 |  | 2019-10-02 | 2019-10-02 | 0d |  |
| 5 | 1.4 | Top Copeau 1 | milestone | 0d | 2019-11-13 | 2019-11-13 |  | 2019-11-06 | 2019-11-06 | 0d |  |
| 6 | 1.5 | Top Copeau 2 | milestone | 0d | 2019-11-20 | 2019-11-20 |  | 2019-11-20 | 2019-11-20 | 0d |  |
| 7 | 1.6 | Top Organe | milestone | 0d | 2020-02-05 | 2020-02-05 |  | 2020-02-05 | 2020-02-05 | 0d |  |
| 8 | 1.7 | Top Véhicule | milestone | 0d | 2020-02-19 | 2020-02-19 |  | 2020-02-19 | 2020-02-19 | 0d |  |
| 9 | 1.8 | Top Moteur | milestone | 0d | 2020-03-04 | 2020-03-04 |  | 2020-03-04 | 2020-03-04 | 0d |  |
| 10 | 1.9 | Top Qualif | milestone | 0d | 2020-03-17 | 2020-03-17 |  | 2020-03-17 | 2020-03-17 | 0d |  |
| 11 | 1.10 | Top Compet | milestone | 0d | 2020-06-24 | 2020-06-24 |  | 2020-06-24 | 2020-06-24 | 0d |  |
| 12 | 2 | **Vacances ECL** |  | 127d | 2019-10-26 | 2020-02-29 |  |  |  |  |  |
| 13 | 2.1 | Toussaint |  | 9d | 2019-10-26 | 2019-11-03 |  |  |  |  |  |
| 14 | 2.2 | Noel |  | 16d | 2019-12-21 | 2020-01-05 |  |  |  |  |  |
| 15 | 2.3 | Hivers |  | 1d | 2020-02-29 | 2020-02-29 |  |  |  |  |  |
| 16 | 3 | **Vacances partenaires** |  | 341d | 2019-10-26 | 2020-09-30 |  |  |  |  |  |
| 17 | 3.1 | **Giraudière** |  | 72d | 2019-10-26 | 2020-01-05 |  |  |  |  |  |
| 18 | 3.1.1 | Toussaint |  | 9d | 2019-10-26 | 2019-11-03 |  |  |  |  |  |
| 19 | 3.1.2 | Noel |  | 16d | 2019-12-21 | 2020-01-05 |  |  |  |  |  |
| 20 | 3.2 | Boisard |  | 99d | 2020-06-24 | 2020-09-30 |  |  |  |  |  |
| 21 | 4 | **Global** |  | 363d | 2019-06-27 | 2020-06-23 |  |  |  |  |  |
| 22 | 4.1 | Livrables |  | 363d | 2019-06-27 | 2020-06-23 | 2, 11FF | 2019-05-08 | 2019-05-27 | 20d |  |
| 23 | 4.2 | Carnet de conception |  | 51d | 2019-08-01 | 2019-09-20 |  |  |  |  | TLS |
| 24 | 4.3 | Nomenclature |  | 51d | 2019-08-01 | 2019-09-20 |  |  |  |  | TLS |

| ID | WBS | Task | Duration | Start | Finish | Predecessors | Complete | Baseline start | Baseline finish | Baseline duration | Resources |
| --- | --- | --- | --- | --- | --- | --- | --- | --- | --- | --- | --- |
| 25 | 5 | **LAS** | 110d | 2019-08-19 | 2019-12-06 |  | 12% | 2019-05-08 | 2019-05-22 | 15d |  |
| 26 | 5.1 | **Cinématique** | 56d | 2019-08-19 | 2019-10-13 |  | 86% |  |  |  |  |
| 27 | 5.1.1 | Gabarit de châssis | 14d | 2019-09-16 | 2019-09-29 |  | 100% |  |  |  |  |
| 28 | 5.1.2 | Points de LAS avant | 42d | 2019-08-19 | 2019-09-29 |  | 100% |  |  |  | MKI; MSO; PAX |
| 29 | 5.1.3 | Points de LAS arrière | 35d | 2019-08-26 | 2019-09-29 |  | 100% |  |  |  | MKI; MSO; PAX |
| 30 | 5.1.4 | Seconde itération | 14d | 2019-09-30 | 2019-10-13 | 28, 29 |  |  |  |  | MKI; MSO; PAX |
| 31 | 5.2 | **Cas de charge** | 48d | 2019-09-23 | 2019-11-09 |  |  |  |  |  |  |
| 32 | 5.2.1 | Paul Clauzel | 3d | 2019-09-23 | 2019-09-25 |  |  |  |  |  | MKI |
| 33 | 5.2.2 | Modèle | 7d | 2019-09-26 | 2019-10-02 | 32 |  |  |  |  | MKI |
| 34 | 5.2.3 | Cas de charge | 14d | 2019-10-03 | 2019-10-16 | 33 |  |  |  |  | MKI |
| 35 | 5.2.4 | Vérification | 7d | 2019-10-17 | 2019-10-23 | 34 |  |  |  |  | MKI |
| 36 | 5.2.5 | Itérations | 7d | 2019-10-24 | 2019-10-30 | 35 |  |  |  |  | MKI |
| 37 | 5.2.6 | Fin des cas de charges | 10d | 2019-10-31 | 2019-11-09 | 36 |  |  |  |  | MKI |
| 38 | 5.3 | **Roue équipée** | 110d | 2019-08-19 | 2019-12-06 |  | 12% |  |  |  |  |
| 39 | 5.3.1 | Choix des pneus | 12d | 2019-08-19 | 2019-08-30 | 28SS | 100% |  |  |  | MKI; MSO |
| 40 | 5.3.2 | Architecture | 7d | 2019-10-07 | 2019-10-13 |  |  |  |  |  | MSO |
| 41 | 5.3.3 | Modifications | 7d | 2019-10-07 | 2019-10-13 | 40SS |  |  |  |  | MSO |
| 42 | 5.3.4 | Frette de frein | 7d | 2019-10-14 | 2019-10-20 | 41 |  |  |  |  | MSO |
| 43 | 5.3.5 | Ebauche CATIA | 14d | 2019-10-21 | 2019-11-03 | 42 |  |  |  |  | MSO |
| 44 | 5.3.6 | Retour points de LAS | 14d | 2019-10-21 | 2019-11-03 | 43SS |  |  |  |  | MSO |
| 45 | 5.3.7 | Optimisation | 26d | 2019-11-04 | 2019-11-29 | 43 |  |  |  |  | MSO |
| 46 | 5.3.8 | Fabricabilité | 7d | 2019-11-30 | 2019-12-06 | 45 |  |  |  |  | MSO |
| 47 | 5.4 | **Triangles** | 80d | 2019-09-09 | 2019-11-27 |  |  |  |  |  |  |
| 48 | 5.4.1 | Choix réglage | 7d | 2019-10-07 | 2019-10-13 |  |  |  |  |  | MKI |
| 49 | 5.4.2 | Dimensionnement biellettes | 7d | 2019-10-14 | 2019-10-20 | 48 |  |  |  |  | MKI |
| 50 | 5.4.3 | Dimensionnement visserie | 7d | 2019-10-14 | 2019-10-20 | 48 |  |  |  |  | MKI |
| 51 | 5.4.4 | Choix rotules | 7d | 2019-10-21 | 2019-10-27 | 50 |  |  |  |  | MKI |
| 52 | 5.4.5 | Choix entretoises | 7d | 2019-10-28 | 2019-11-03 | 51 |  |  |  |  | MKI |
| 53 | 5.4.6 | Concertation | 7d | 2019-09-09 | 2019-09-15 |  |  |  |  |  | MKI |
| 54 | 5.4.7 | Dimenssionnement des tubes | 7d | 2019-10-17 | 2019-10-23 | 34, 53 |  |  |  |  | MKI |
| 55 | 5.4.8 | Dimensionnement des inserts | 7d | 2019-10-24 | 2019-10-30 | 54 |  |  |  |  | MKI |
| 56 | 5.4.9 | Essais collages | 28d | 2019-10-31 | 2019-11-27 | 55 |  |  |  |  | MKI |

Notes:
- 32: Le contacter pour la licence Mecamaster
- 34: Premiers cas de charges
- 35: A voir avec Paul Clozel
- 41: Recherche des éléments où il faut investir du temps
- 42: Etudier la faisabilité d'un frette combiné au moyeu
- 48: Voir Claude Rouelle : pas différents de chaque côté des biellettes
- 53: Concertation LAS, Châssis
- 56: Fatigue

| ID | WBS | Task | Duration | Start | Finish | Predecessors | Complete | Baseline start | Baseline finish | Baseline duration | Resources |
| --- | --- | --- | --- | --- | --- | --- | --- | --- | --- | --- | --- |
| 57 | 5.5 | **Suspension** | 28d | 2019-09-30 | 2019-10-27 |  |  |  |  |  |  |
| 58 | 5.5.1 | Pivot | 7d | 2019-09-30 | 2019-10-06 |  |  |  |  |  | PAX |
| 59 | 5.5.2 | Basculeurs | 14d | 2019-10-14 | 2019-10-27 |  |  |  |  |  | PAX |
| 60 | 5.6 | **Anti-roulis** | 28d | 2019-09-30 | 2019-10-27 |  |  |  |  |  |  |
| 61 | 5.6.1 | Modèle efforts | 14d | 2019-09-30 | 2019-10-13 |  |  |  |  |  | PAX |
| 62 | 5.6.2 | Dimenssionnement de la barre de torsion | 14d | 2019-10-14 | 2019-10-27 | 61 |  |  |  |  | PAX |
| 63 | 5.6.3 | Couteaux | 14d | 2019-09-30 | 2019-10-13 |  |  |  |  |  | PAX |
| 64 | 5.6.4 | Pivot | 7d | 2019-10-14 | 2019-10-20 | 63 |  |  |  |  | PAX |
| 65 | 5.6.5 | Coussinets | 7d | 2019-10-21 | 2019-10-27 | 64 |  |  |  |  | PAX |
| 66 | 5.7 | **Direction** | 49d | 2019-09-23 | 2019-11-10 |  |  |  |  |  | SGX |
| 67 | 5.7.1 | Théorie de direction | 14d | 2019-09-23 | 2019-10-06 |  |  |  |  |  | MKI; SGX |
| 68 | 5.7.2 | Cardan | 14d | 2019-10-07 | 2019-10-20 | 67 |  |  |  |  | SGX |
| 69 | 5.7.3 | Colonne de direction | 7d | 2019-10-21 | 2019-10-27 | 68 |  |  |  |  | SGX |
| 70 | 5.7.4 | Finalisation cinématique | 7d | 2019-10-28 | 2019-11-03 | 28, 69 |  |  |  |  | SGX |
| 71 | 5.7.5 | Pivot et manchon | 7d | 2019-11-04 | 2019-11-10 | 70 |  |  |  |  | SGX |
| 72 | 5.8 | **Freinage** | 56d | 2019-09-23 | 2019-11-17 |  |  |  |  |  | EPZ |
| 73 | 5.8.1 | Répartition freinage | 14d | 2019-09-23 | 2019-10-06 |  |  |  |  |  |  |
| 74 | 5.8.2 | Dimenssionnement disques | 21d | 2019-10-07 | 2019-10-27 | 73 |  |  |  |  |  |
| 75 | 5.8.3 | Dimenssionnement étrier | 21d | 2019-10-07 | 2019-10-27 | 73 |  |  |  |  |  |
| 76 | 5.8.4 | Durites | 21d | 2019-10-28 | 2019-11-17 | 75 |  |  |  |  |  |
| 77 | 5.9 | **Pédalier** | 49d | 2019-09-16 | 2019-11-03 |  |  |  |  |  |  |
| 78 | 5.9.1 | Accélérateur | 35d | 2019-09-16 | 2019-10-20 |  |  |  |  |  | JMN |
| 79 | 5.9.2 | Frein | 35d | 2019-09-30 | 2019-11-03 |  |  |  |  |  | JMN |
| 80 | 6 | **Frame** | 100d | 2019-08-12 | 2019-11-19 |  | 10% | 2019-05-08 | 2019-05-18 | 11d |  |
| 81 | 6.1 | **Structure tubulaire** | 98d | 2019-08-12 | 2019-11-17 |  | 23% |  |  |  |  |
| 82 | 6.1.1 | Premières esquisses | 28d | 2019-08-12 | 2019-09-08 |  | 100% |  |  |  | CMI |
| 83 | 6.1.2 | Points de LAS | 21d | 2019-09-09 | 2019-09-29 | 82 | 30% |  |  |  | CMI |
| 84 | 6.1.3 | Moteur - Echappement | 21d | 2019-09-09 | 2019-09-29 | 82 |  |  |  |  | CMI |
| 85 | 6.1.4 | Finalisation filaire | 14d | 2019-09-16 | 2019-09-29 |  |  |  |  |  | CMI |
| 86 | 6.1.5 | Seconde itération | 14d | 2019-09-30 | 2019-10-13 | 83, 84, 85 |  |  |  |  | CMI |
| 87 | 6.1.6 | Vérif règlement | 7d | 2019-10-14 | 2019-10-20 | 86 |  |  |  |  | CMI |
| 88 | 6.1.7 | Raideur en torsions | 14d | 2019-10-14 | 2019-10-27 |  |  |  |  |  | CMI |
| 89 | 6.1.8 | Autres cas de charge | 14d | 2019-10-21 | 2019-11-03 |  |  |  |  |  | CMI |
| 90 | 6.1.9 | Vérif règlement | 14d | 2019-11-04 | 2019-11-17 | 88, 89 |  |  |  |  | CMI |
| 91 | 6.2 | Ergonomie | 62d | 2019-09-17 | 2019-11-17 | 90FF |  |  |  |  | CMI |

Notes:
- 61: Pour la démarche
- 62: Pour la démarche
- 63: Pour la démarche
- 64: Pour la démarche
- 65: Pour la démarche
- 72: En collaboration avec la roue équipée et le pédalier

| ID | WBS | Task | Duration | Start | Finish | Predecessors | Complete | Resources |
| --- | --- | --- | --- | --- | --- | --- | --- | --- |
| 92 | 6.3 | **Equipements** | 58d | 2019-09-23 | 2019-11-19 |  |  |  |
| 93 | 6.3.1 | Suivi des chappes | 58d | 2019-09-23 | 2019-11-19 | 6FF |  | TLS |
| 94 | 6.3.2 | Anti-intrusion plate | 35d | 2019-10-14 | 2019-11-17 | 86 |  | CMI |
| 95 | 6.3.3 | Pare-feu | 35d | 2019-10-14 | 2019-11-17 | 86 |  | CMI |
| 96 | 6.3.4 | Fond plat | 35d | 2019-10-14 | 2019-11-17 | 86 |  | PTS |
| 97 | 7 | **Aéro** | 91d | 2019-08-19 | 2019-11-17 |  | 4% |  |
| 98 | 7.1 | **Fabrication** | 23d | 2019-09-04 | 2019-09-26 |  | 43% |  |
| 99 | 7.1.1 | **Démarchage** | 19d | 2019-09-04 | 2019-09-22 |  | 63% |  |
| 100 | 7.1.1.1 | Rédaction du mail | 7d | 2019-09-04 | 2019-09-10 |  | 100% | ACO |
| 101 | 7.1.1.2 | Recherche de contacts | 19d | 2019-09-04 | 2019-09-22 |  | 50% | ACO |
| 102 | 7.1.2 | **Audit Safran** | 10d | 2019-09-17 | 2019-09-26 |  | 5% |  |
| 103 | 7.1.2.1 | CdCF | 9d | 2019-09-17 | 2019-09-25 | 108SF |  |  |
| 104 | 7.1.2.2 | Méthode d'attache | 9d | 2019-09-17 | 2019-09-25 | 108SF | 25% |  |
| 105 | 7.1.2.3 | Process de production | 9d | 2019-09-17 | 2019-09-25 | 108SF |  |  |
| 106 | 7.1.2.4 | Méthode de simulation | 9d | 2019-09-17 | 2019-09-25 | 108SF |  |  |
| 107 | 7.1.2.5 | Diaporama à faire | 3d | 2019-09-23 | 2019-09-25 | 108SF |  |  |
| 108 | 7.1.2.6 | Audit | 1d | 2019-09-26 | 2019-09-26 |  |  | MJT; ARZ; MRI; ACO; TMN; PTS |
| 109 | 7.2 | **Méthode numérique** | 35d | 2019-08-19 | 2019-09-22 |  |  |  |
| 110 | 7.2.1 | Simulation mécanique | 35d | 2019-08-19 | 2019-09-22 |  |  | NGO |
| 111 | 7.3 | **Carrosserie** | 63d | 2019-09-16 | 2019-11-17 |  |  |  |
| 112 | 7.3.1 | REX et étude concurrence | 14d | 2019-09-16 | 2019-09-29 |  |  | PTS |
| 113 | 7.3.2 | Premier version | 14d | 2019-09-30 | 2019-10-13 | 85, 112 |  | PTS |
| 114 | 7.3.3 | Optimisation aéro | 14d | 2019-10-14 | 2019-10-27 | 113 |  | PTS |
| 115 | 7.3.4 | Seconde itération | 7d | 2019-10-28 | 2019-11-03 | 86, 114 |  | PTS |
| 116 | 7.3.5 | Fixation aéro | 14d | 2019-11-04 | 2019-11-17 | 115 |  | PTS |

Notes:
- 108: 13h30 à 15h

| ID | WBS | Task | Duration | Start | Finish | Predecessors | Complete | Baseline start | Baseline finish | Baseline duration | Resources |
| --- | --- | --- | --- | --- | --- | --- | --- | --- | --- | --- | --- |
| 117 | 7.4 | **Ouies** | 28d | 2019-09-17 | 2019-10-14 |  |  |  |  |  |  |
| 118 | 7.4.1 | Concept ouies | 14d | 2019-09-17 | 2019-09-30 |  |  |  |  |  |  |
| 119 | 7.4.2 | Tunnel radiateur | 28d | 2019-09-17 | 2019-10-14 | 118SS |  |  |  |  |  |
| 120 | 7.5 | **Aile arrière** | 63d | 2019-09-09 | 2019-11-10 |  | 6% |  |  |  |  |
| 121 | 7.5.1 | Étude aéro | 14d | 2019-09-09 | 2019-09-22 |  |  |  |  |  | MRI; ACO |
| 122 | 7.5.2 | Concept d'attaches | 28d | 2019-09-09 | 2019-10-06 |  | 30% |  |  |  | TCN |
| 123 | 7.5.3 | Méthode de réglage | 14d | 2019-09-23 | 2019-10-06 |  |  |  |  |  | TCN |
| 124 | 7.5.4 | Modèle d'efforts sur l'aile | 7d | 2019-10-07 | 2019-10-13 | 123 |  |  |  |  | TMN |
| 125 | 7.5.5 | Dessin des inserts | 21d | 2019-10-07 | 2019-10-27 | 122, 123 |  |  |  |  | TCN |
| 126 | 7.5.6 | Simulation mécanique | 28d | 2019-10-14 | 2019-11-10 | 108, 110, 124 |  |  |  |  | TMN |
| 127 | 7.5.7 | Calcul de déflection | 28d | 2019-10-14 | 2019-11-10 |  |  |  |  |  | TMN |
| 128 | 7.6 | **Aile avant** | 70d | 2019-09-09 | 2019-11-17 |  |  |  |  |  |  |
| 129 | 7.6.1 | Étude aéro | 56d | 2019-09-09 | 2019-11-03 |  |  |  |  |  | MRI; ACO |
| 130 | 7.6.2 | Concept d'attaches | 21d | 2019-09-16 | 2019-10-06 |  |  |  |  |  | TCN |
| 131 | 7.6.3 | Méthode de réglage | 21d | 2019-09-23 | 2019-10-13 |  |  |  |  |  | TCN |
| 132 | 7.6.4 | Modèle d'efforts sur l'aile | 7d | 2019-10-14 | 2019-10-20 | 131 |  |  |  |  | TMN |
| 133 | 7.6.5 | Dessin des inserts | 21d | 2019-10-14 | 2019-11-03 | 132SS |  |  |  |  | TCN |
| 134 | 7.6.6 | Simulation mécanique | 28d | 2019-10-21 | 2019-11-17 | 108, 110, 132 |  |  |  |  | TMN |
| 135 | 7.6.7 | Calcul de déflection | 21d | 2019-10-14 | 2019-11-03 |  |  |  |  |  | TMN |
| 136 | 7.7 | **Diffuseur** | 56d | 2019-09-09 | 2019-11-03 |  |  |  |  |  |  |
| 137 | 7.7.1 | Concept aéro | 21d | 2019-09-09 | 2019-09-29 |  |  |  |  |  | MRI; ACO |
| 138 | 7.7.2 | Dessin CATIA | 35d | 2019-09-16 | 2019-10-20 |  |  |  |  |  | MRI; ACO |
| 139 | 7.7.3 | Simulation aéro | 42d | 2019-09-23 | 2019-11-03 |  |  |  |  |  | MRI; ACO |
| 140 | 8 | **Motorisation** | 91d | 2019-08-19 | 2019-11-17 |  | 17% | 2019-05-06 | 2019-05-20 | 15d |  |
| 141 | 8.1 | **Admission** | 56d | 2019-09-16 | 2019-11-10 |  |  |  |  |  |  |
| 142 | 8.1.1 | Contact fournisseur | 14d | 2019-09-16 | 2019-09-29 |  |  |  |  |  | TLS |
| 143 | 8.1.2 | Concept bride guillotine | 21d | 2019-09-16 | 2019-10-06 |  |  |  |  |  | TLS |
| 144 | 8.1.3 | Concept plenum admission | 21d | 2019-09-16 | 2019-10-06 |  |  |  |  |  | TLS |
| 145 | 8.1.4 | Etudes aéro | 35d | 2019-09-16 | 2019-10-20 |  |  |  |  |  | TLS |
| 146 | 8.1.5 | Audit Volvo | 7d | 2019-10-21 | 2019-10-27 | 145 |  |  |  |  | TLS |
| 147 | 8.1.6 | Calcul FEM | 7d | 2019-10-21 | 2019-10-27 | 145 |  |  |  |  | TLS |
| 148 | 8.1.7 | Validation Romain | 14d | 2019-10-28 | 2019-11-10 | 147 |  |  |  |  | TLS |
| 149 | 8.1.8 | Validation académiciens | 14d | 2019-10-28 | 2019-11-10 | 147 |  |  |  |  | TLS |

Notes:
- 119: À dessiner / On a besoin du volume enveloppe
- 122: ISAT (rq : l'aile principale de génère que peu de drag donc elle reste fixe) / + Attaches des endplates

| ID | WBS | Task | Duration | Start | Finish | Predecessors | Complete | Resources |
| --- | --- | --- | --- | --- | --- | --- | --- | --- |
| 150 | 8.2 | **Echappement** | 63d | 2019-08-19 | 2019-10-20 |  | 41% |  |
| 151 | 8.2.1 | Contact Bery | 7d | 2019-09-23 | 2019-09-29 |  |  | MJT |
| 152 | 8.2.2 | Concept échappement | 7d | 2019-08-19 | 2019-08-25 |  | 100% | MJT |
| 153 | 8.2.3 | CATIA | 28d | 2019-08-26 | 2019-09-22 | 152 | 100% | MJT |
| 154 | 8.2.4 | Vérification intégration chassis | 14d | 2019-09-23 | 2019-10-06 | 153 |  |  |
| 155 | 8.2.5 | Validation Romain | 14d | 2019-10-07 | 2019-10-20 | 154 |  | MJT |
| 156 | 8.2.6 | Validation académiciens | 14d | 2019-10-07 | 2019-10-20 | 154 |  | MJT |
| 157 | 8.3 | **Carto** | 7d | 2019-11-11 | 2019-11-17 |  |  |  |
| 158 | 8.3.1 | Prevoir passage au banc de Givors | 7d | 2019-11-11 | 2019-11-17 | 148, 149, 155, 156 |  | MJT |
| 159 | 8.4 | **Refroidissement** | 42d | 2019-08-26 | 2019-10-06 |  | 60% | ASE |
| 160 | 8.4.1 | Dimensionnement | 21d | 2019-08-26 | 2019-09-15 |  | 100% | ASE |
| 161 | 8.4.2 | Placer les radiateurs | 14d | 2019-09-23 | 2019-10-06 | 160, 170 |  | ASE |
| 162 | 8.5 | **Circuit d'essence** | 56d | 2019-09-23 | 2019-11-17 |  |  | ASE |
| 163 | 8.5.1 | Réservoir | 21d | 2019-09-23 | 2019-10-13 |  |  |  |
| 164 | 8.5.2 | Pompe à essence | 14d | 2019-09-30 | 2019-10-13 |  |  |  |
| 165 | 8.5.3 | Circuit d'essence | 14d | 2019-10-14 | 2019-10-27 | 164 |  |  |
| 166 | 8.5.4 | Tuyau de remplissage | 14d | 2019-10-14 | 2019-10-27 | 164 |  |  |
| 167 | 8.5.5 | Modèle CATIA | 21d | 2019-10-28 | 2019-11-17 | 165, 166 |  |  |
| 168 | 8.5.6 | Protection thermique | 7d | 2019-10-28 | 2019-11-03 | 163, 164, 165 |  |  |
| 169 | 8.6 | **Transmission secondaire** | 63d | 2019-09-16 | 2019-11-17 |  |  |  |
| 170 | 8.6.1 | Placer le moteur | 7d | 2019-09-16 | 2019-09-22 |  |  | ASE |
| 171 | 8.6.2 | Piste amélioration | 14d | 2019-09-16 | 2019-09-29 |  |  |  |
| 172 | 8.6.3 | Différentiel | 14d | 2019-09-16 | 2019-09-29 |  |  |  |
| 173 | 8.6.4 | Excentriques | 21d | 2019-09-30 | 2019-10-20 | 172 |  |  |
| 174 | 8.6.5 | Porte-excentriques | 21d | 2019-09-30 | 2019-10-20 | 172 |  |  |
| 175 | 8.6.6 | Rapport de transmission secondaire | 35d | 2019-09-16 | 2019-10-20 |  |  |  |
| 176 | 8.6.7 | Pignon - Couronne | 21d | 2019-09-30 | 2019-10-20 | 175FF |  |  |
| 177 | 8.6.8 | Porte couronne | 14d | 2019-10-21 | 2019-11-03 | 176 |  |  |
| 178 | 8.6.9 | Chainshield | 14d | 2019-11-04 | 2019-11-17 | 177 |  |  |

Notes:
- 161: En lien avec le dessin des ouies de PTS
- 169: Ressources: / ASE et une recrue semble correct et moins risqué que deux recrues. / Une des recrues sera donc affecté au circuit d'essence.
- 177: Discuter avec Bertrand Houx pour usinage à Centrale
- 178: Ne pas lancer la prod, faire un template au fablab d'abord et usiner le crai quand c'est bon

| ID | WBS | Task | Duration | Start | Finish | Predecessors | Complete | Baseline start | Baseline finish | Baseline duration | Resources |
| --- | --- | --- | --- | --- | --- | --- | --- | --- | --- | --- | --- |
| 179 | 9 | **SEISM** | 84d | 2019-09-02 | 2019-11-24 |  | 19% | 2019-05-10 | 2019-05-14 | 5d |  |
| 180 | 9.1 | **Faisceau** | 84d | 2019-09-02 | 2019-11-24 |  | 31% |  |  |  |  |
| 181 | 9.1.1 | Architecture faisceau | 14d | 2019-09-02 | 2019-09-15 |  | 100% |  |  |  | CLS |
| 182 | 9.1.2 | Schema faisceau | 28d | 2019-09-16 | 2019-10-13 | 181 | 100% |  |  |  | CLS |
| 183 | 9.1.3 | Batterie | 14d | 2019-09-30 | 2019-10-13 |  |  |  |  |  | CLS |
| 184 | 9.1.4 | Dimensionnement câble | 14d | 2019-10-07 | 2019-10-20 |  |  |  |  |  | CLS |
| 185 | 9.1.5 | Placer les boîtes | 14d | 2019-10-14 | 2019-10-27 |  |  |  |  |  | CLS |
| 186 | 9.1.6 | Contacter Souriaux | 7d | 2019-09-16 | 2019-09-22 |  |  |  |  |  | CLS |
| 187 | 9.1.7 | Choix connecteur | 14d | 2019-10-14 | 2019-10-27 | 186 |  |  |  |  | CLS |
| 188 | 9.1.8 | Modèle CATIA | 28d | 2019-10-28 | 2019-11-24 | 185, 187 |  |  |  |  | CLS |
| 189 | 9.2 | **Passage de rapport** | 70d | 2019-09-02 | 2019-11-10 |  | 5% |  |  |  |  |
| 190 | 9.2.1 | Dimensionnement moteur | 28d | 2019-09-02 | 2019-09-29 |  | 10% |  |  |  | BMA |
| 191 | 9.2.2 | Dimensionnement réducteur | 28d | 2019-09-02 | 2019-09-29 |  | 10% |  |  |  | BMA |
| 192 | 9.2.3 | Reprendre le code | 28d | 2019-09-30 | 2019-10-27 | 190, 191 |  |  |  |  | BMA |
| 193 | 9.2.4 | Shield | 28d | 2019-10-14 | 2019-11-10 |  |  |  |  |  | BMA |

Notes:
- 182: HV / LV / Acquisition de données
- 191: Choisir entre Atomix et Optimus
- 193: Inclure la connection CAN
