# Gantt EPSA

Schedule from GanttProject, 2019-04-03 to 2020-06-24, baseline: 15_05_2019.
EPSA

## Calendars

- Project calendar: Mon-Fri working; Sat-Sun off.

## Resources

| Resource |
| --- |
| TMN |
| PTS |
| CMI |
| ASE |
| CAD |
| MJT |
| TLS |
| PTN |
| IGH |
| GLD |
| EBA |
| MKI |
| MSO |
| PAX |
| ADT |
| VDA |
| PCK |

## Schedule

| ID | WBS | Task | Type | Duration | Start | Finish | Predecessors | Complete | Baseline start | Baseline finish | Baseline duration | Resources |
| --- | --- | --- | --- | --- | --- | --- | --- | --- | --- | --- | --- | --- |
| 1 | 1 | **Tops** |  | 320d | 2019-04-03 | 2020-06-23 |  |  | 2019-04-03 | 2020-06-23 | 320d |  |
| 2 | 1.1 | Top Projet | milestone | 0d | 2019-04-03 | 2019-04-03 |  |  | 2019-04-03 | 2019-04-03 | 0d |  |
| 3 | 1.2 | RVP2 | milestone | 0d | 2019-04-03 | 2019-04-03 |  |  | 2019-04-03 | 2019-04-03 | 0d |  |
| 4 | 1.3 | Roll Out | milestone | 0d | 2019-04-10 | 2019-04-10 |  |  | 2019-04-10 | 2019-04-10 | 0d |  |
| 5 | 1.4 | Top Prédim | milestone | 0d | 2019-06-12 | 2019-06-12 |  |  | 2019-06-12 | 2019-06-12 | 0d |  |
| 6 | 1.5 | Top Appro | milestone | 0d | 2019-06-27 | 2019-06-27 |  |  | 2019-06-27 | 2019-06-27 | 0d |  |
| 7 | 1.6 | Top Saison | milestone | 0d | 2019-09-30 | 2019-09-30 |  |  | 2019-09-30 | 2019-09-30 | 0d |  |
| 8 | 1.7 | Top Maquette | milestone | 0d | 2019-05-01 | 2019-05-01 |  |  | 2019-05-01 | 2019-05-01 | 0d |  |
| 9 | 1.8 | Top Synthèse | milestone | 0d | 2019-10-02 | 2019-10-02 |  |  | 2019-10-02 | 2019-10-02 | 0d |  |
| 10 | 1.9 | Top Copeau 1 | milestone | 0d | 2019-11-06 | 2019-11-06 |  |  | 2019-11-06 | 2019-11-06 | 0d |  |
| 11 | 1.10 | Top Copeau 2 | milestone | 0d | 2019-11-20 | 2019-11-20 |  |  | 2019-11-20 | 2019-11-20 | 0d |  |
| 12 | 1.11 | Top Organe | milestone | 0d | 2020-02-05 | 2020-02-05 |  |  | 2020-02-05 | 2020-02-05 | 0d |  |
| 13 | 1.12 | Top Véhicule | milestone | 0d | 2020-02-19 | 2020-02-19 |  |  | 2020-02-19 | 2020-02-19 | 0d |  |
| 14 | 1.13 | Top Moteur | milestone | 0d | 2020-03-04 | 2020-03-04 |  |  | 2020-03-04 | 2020-03-04 | 0d |  |
| 15 | 1.14 | Top Qualif | milestone | 0d | 2020-03-17 | 2020-03-17 |  |  | 2020-03-17 | 2020-03-17 | 0d |  |
| 16 | 1.15 | Top Compet | milestone | 0d | 2020-06-24 | 2020-06-24 |  |  | 2020-06-24 | 2020-06-24 | 0d |  |
| 17 | 2 | **Livrables** |  | 20d | 2019-05-08 | 2019-06-04 |  |  | 2019-05-08 | 2019-06-04 | 20d |  |
| 18 | 2.1 | D2I |  | 5d | 2019-05-08 | 2019-05-14 |  |  | 2019-05-08 | 2019-05-14 | 5d |  |
| 19 | 2.2 | MSP |  | 5d | 2019-05-08 | 2019-05-14 |  |  | 2019-05-08 | 2019-05-14 | 5d |  |
| 20 | 2.3 | CdCF |  | 5d | 2019-05-15 | 2019-05-21 |  |  | 2019-05-15 | 2019-05-21 | 5d |  |
| 21 | 2.4 | KPI |  | 5d | 2019-05-22 | 2019-05-28 |  |  | 2019-05-22 | 2019-05-28 | 5d |  |
| 22 | 2.5 | CCA |  | 5d | 2019-05-22 | 2019-05-28 |  |  | 2019-05-22 | 2019-05-28 | 5d |  |
| 23 | 2.6 | MIP-3D |  | 5d | 2019-05-29 | 2019-06-04 |  |  | 2019-05-29 | 2019-06-04 | 5d |  |
| 24 | 3 | **Frame** |  | 11d | 2019-05-08 | 2019-05-22 |  | 44% | 2019-05-08 | 2019-05-22 | 11d |  |
| 25 | 3.1 | **Réunion Aéro** |  | 11d | 2019-05-08 | 2019-05-22 |  | 68% | 2019-05-08 | 2019-05-22 | 11d |  |
| 26 | 3.1.1 | Organiser réunion Aéro 1 |  | 6d | 2019-05-08 | 2019-05-15 |  | 100% | 2019-05-08 | 2019-05-15 | 6d | TMN |
| 27 | 3.1.2 | Réunion Aéro 1 |  | 1d | 2019-05-16 | 2019-05-16 | 26 |  | 2019-05-16 | 2019-05-16 | 1d |  |
| 28 | 3.1.3 | Préparation simulation |  | 3d | 2019-05-08 | 2019-05-10 |  | 100% | 2019-05-08 | 2019-05-10 | 3d | TMN |
| 29 | 3.1.4 | Simulation |  | 4d | 2019-05-13 | 2019-05-16 | 28 | 50% | 2019-05-13 | 2019-05-16 | 4d | TMN |
| 30 | 3.1.5 | Calcul indicateurs + Demander Simu Accel/Slid |  | 1d | 2019-05-17 | 2019-05-17 | 29 |  | 2019-05-17 | 2019-05-17 | 1d |  |
| 31 | 3.1.6 | Réunion 2 EPSAéro ou pas |  | 1d | 2019-05-22 | 2019-05-22 | 30, 41, 52, 53, 54 |  | 2019-05-22 | 2019-05-22 | 1d |  |

Notes:
- 28: TMN SkidPad / Agostino Accel
- 29: Il faut obtenir Cx et Cz
- 30: €/points / €/kg downforce

| ID | WBS | Task | Duration | Start | Finish | Predecessors | Complete | Baseline start | Baseline finish | Baseline duration | Constraint | Resources |
| --- | --- | --- | --- | --- | --- | --- | --- | --- | --- | --- | --- | --- |
| 32 | 3.2 | **Devis Aéro** | 6d | 2019-05-08 | 2019-05-15 |  | 83% | 2019-05-08 | 2019-05-09 | 2d | start no earlier than 2019-05-08 |  |
| 33 | 3.2.1 | Lancer Devis | 5d | 2019-05-08 | 2019-05-14 |  | 100% | 2019-05-08 | 2019-05-08 | 1d |  |  |
| 34 | 3.2.2 | Relancer devis | 1d | 2019-05-15 | 2019-05-15 | 33 |  | 2019-05-09 | 2019-05-09 | 1d |  |  |
| 35 | 3.3 | Finir BOM | 4d | 2019-05-08 | 2019-05-13 |  |  | 2019-05-08 | 2019-05-13 | 4d |  | CMI |
| 36 | 3.4 | Recontacter Tachon | 7d | 2019-05-08 | 2019-05-16 |  |  | 2019-05-08 | 2019-05-16 | 7d |  | CMI |
| 37 | 4 | **Motorisation** | 15d | 2019-05-06 | 2019-05-24 |  |  | 2019-05-06 | 2019-05-24 | 15d |  |  |
| 38 | 4.1 | **Modèle** | 10d | 2019-05-08 | 2019-05-21 |  |  | 2019-05-08 | 2019-05-21 | 10d |  |  |
| 39 | 4.1.1 | Optimum Lap | 10d | 2019-05-08 | 2019-05-21 |  |  | 2019-05-08 | 2019-05-21 | 10d |  | IGH |
| 40 | 4.1.2 | Modèle Accel | 5d | 2019-05-08 | 2019-05-14 |  |  | 2019-05-08 | 2019-05-14 | 5d |  | ASE |
| 41 | 4.1.3 | Simulation avec aéro | 3d | 2019-05-17 | 2019-05-21 | 29, 40 |  | 2019-05-17 | 2019-05-21 | 3d |  |  |
| 42 | 4.2 | **Refroidissement** | 5d | 2019-05-20 | 2019-05-24 |  |  | 2019-05-20 | 2019-05-24 | 5d |  |  |
| 43 | 4.2.1 | Architecture à définir | 5d | 2019-05-20 | 2019-05-24 |  |  | 2019-05-20 | 2019-05-24 | 5d |  | ASE |
| 44 | 4.3 | **Admission** | 10d | 2019-05-08 | 2019-05-21 |  |  | 2019-05-08 | 2019-05-21 | 10d |  |  |
| 45 | 4.3.1 | Architecture à définir | 10d | 2019-05-08 | 2019-05-21 |  |  | 2019-05-08 | 2019-05-21 | 10d |  |  |
| 46 | 4.4 | **Circuit d'essence** | 15d | 2019-05-06 | 2019-05-24 |  |  | 2019-05-06 | 2019-05-24 | 15d |  |  |
| 47 | 4.4.1 | Reflexion sur l'éthanol | 15d | 2019-05-06 | 2019-05-24 |  |  | 2019-05-06 | 2019-05-24 | 15d |  | CAD |
| 48 | 4.4.2 | Sytème de remplissage plus léger | 10d | 2019-05-08 | 2019-05-21 |  |  | 2019-05-08 | 2019-05-21 | 10d |  | GLD; EBA |
| 49 | 5 | **LAS** | 15d | 2019-05-08 | 2019-05-28 |  |  | 2019-05-08 | 2019-05-28 | 15d |  |  |
| 50 | 5.1 | **Pneu** | 15d | 2019-05-08 | 2019-05-28 |  |  | 2019-05-08 | 2019-05-28 | 15d |  |  |
| 51 | 5.1.1 | Modèle de pneu | 10d | 2019-05-08 | 2019-05-21 |  |  | 2019-05-08 | 2019-05-21 | 10d |  | MSO |
| 52 | 5.1.2 | Modèle accélération latérale | 5d | 2019-05-08 | 2019-05-14 |  |  | 2019-05-08 | 2019-05-14 | 5d |  | MKI |
| 53 | 5.1.3 | Modèle accélération longitudinale | 5d | 2019-05-08 | 2019-05-14 |  |  | 2019-05-08 | 2019-05-14 | 5d |  | ASE; MKI |
| 54 | 5.1.4 | Modèle freinage | 5d | 2019-05-08 | 2019-05-14 |  |  | 2019-05-08 | 2019-05-14 | 5d |  | ADT |
| 55 | 5.1.5 | Matrice de décision | 5d | 2019-05-22 | 2019-05-28 | 51, 52, 53 |  | 2019-05-22 | 2019-05-28 | 5d |  | MKI; MSO |

Notes:
- 39: Circuit FS ATA
- 40: Simuler le temps à l'accel avec la trainée simulée en configuration lisse
- 43: A définir en fonction du choix aéro
- 45: faire attention à l'aéro
- 51: Code / Donnée TTC
- 53: Avec ASE
- 54: Choix aéro

| ID | WBS | Task | Duration | Start | Finish | Baseline start | Baseline finish | Baseline duration | Resources |
| --- | --- | --- | --- | --- | --- | --- | --- | --- | --- |
| 56 | 5.2 | **Suspension** | 5d | 2019-05-22 | 2019-05-28 | 2019-05-22 | 2019-05-28 | 5d |  |
| 57 | 5.2.1 | Choix architecture | 5d | 2019-05-22 | 2019-05-28 | 2019-05-22 | 2019-05-28 | 5d | PAX |
| 58 | 5.3 | **BAR** | 5d | 2019-05-22 | 2019-05-28 | 2019-05-22 | 2019-05-28 | 5d |  |
| 59 | 5.3.1 | Choix architecture | 5d | 2019-05-22 | 2019-05-28 | 2019-05-22 | 2019-05-28 | 5d | VDA |
| 60 | 5.4 | **Optimum Kinematics** | 15d | 2019-05-08 | 2019-05-28 | 2019-05-08 | 2019-05-28 | 15d |  |
| 61 | 5.4.1 | Prise en main | 10d | 2019-05-08 | 2019-05-21 | 2019-05-08 | 2019-05-21 | 10d | PCK |
| 62 | 5.4.2 | Faire le CR | 15d | 2019-05-08 | 2019-05-28 | 2019-05-08 | 2019-05-28 | 15d | PCK |
| 63 | 6 | **SEISM** | 5d | 2019-05-10 | 2019-05-16 | 2019-05-10 | 2019-05-16 | 5d |  |
| 64 | 6.1 | **Démarchage** | 5d | 2019-05-10 | 2019-05-16 | 2019-05-10 | 2019-05-16 | 5d |  |
| 65 | 6.1.1 | Caméra de casque | 5d | 2019-05-10 | 2019-05-16 | 2019-05-10 | 2019-05-16 | 5d |  |
